# OBRA NEST CANCELLI - BASELINE R03 (EAP por Local)

Schedule from MS Project XML, 2026-03-02 to 2028-08-23, status date 2026-08-14, costs in R$.
Construtora N Dalmina

## Calendars

- Obra Nest Cancelli: Mon-Fri 08:00-12:00, 13:00-17:00; Sat-Sun off. Exceptions (off unless hours are given): 2026-04-03 (Feriado), 2026-04-21 (Feriado), 2026-05-01 (Feriado), 2026-06-04 (Feriado), 2026-09-07 (Feriado), 2026-10-12 (Feriado), 2026-11-02 (Feriado), 2026-11-20 (Feriado), 2026-12-24 to 2026-12-25 (Feriado), 2026-12-31 to 2027-01-01 (Feriado), 2027-02-08 to 2027-02-09 (Feriado), 2027-03-26 (Feriado), 2027-04-21 (Feriado), 2027-05-27 (Feriado), 2027-09-07 (Feriado), 2027-10-12 (Feriado), 2027-11-02 (Feriado), 2027-11-15 (Feriado), 2027-12-24 (Feriado), 2027-12-31 (Feriado), 2028-02-28 to 2028-02-29 (Feriado), 2028-04-14 (Feriado), 2028-04-21 (Feriado), 2028-05-01 (Feriado), 2028-06-15 (Feriado).

## Schedule

| ID | WBS | Task | Type | Duration | Start | Finish | Predecessors | Complete | Baseline start | Baseline finish | Baseline duration | Cost | Baseline cost |
| --- | --- | --- | --- | --- | --- | --- | --- | --- | --- | --- | --- | --- | --- |
| 1 | 1 | **GERENCIAMENTO, APROVAÇÕES E EQUIPE** |  | 619d | 2026-03-02 | 2028-08-23 |  |  | 2026-03-02 | 2028-08-23 | 619d | 1,181,281.3 | 1,181,281.3 |
| 2 | 1.1 | **Documentação e Aprovações** |  | 21d | 2026-03-02 | 2026-03-30 |  |  | 2026-03-02 | 2026-03-30 | 21d | 146,500 | 146,500 |
| 3 | 1.1.1 | Projetos, ARTs/RRTs, alvará e licenças |  | 20d | 2026-03-02 | 2026-03-27 |  | 100% | 2026-03-02 | 2026-03-27 | 20d | 146,500 | 146,500 |
| 4 | 1.1.2 | MARCO: Alvará de construção emitido | milestone | 0d | 2026-03-30 | 2026-03-30 | 3 | 100% | 2026-03-30 | 2026-03-30 | 0d |  |  |
| 5 | 1.2 | **Equipe Técnica e Gestão de Obra** |  | 619d | 2026-03-02 | 2028-08-23 |  |  | 2026-03-02 | 2028-08-23 | 619d | 1,034,781.3 | 1,034,781.3 |
| 6 | 1.2.1 | Equipe técnica, seguros, SST e despesas administrativas |  | 619d | 2026-03-02 | 2028-08-23 | 3SS |  | 2026-03-02 | 2028-08-23 | 619d | 1,034,781.3 | 1,034,781.3 |
| 7 | 2 | **CANTEIRO E SERVIÇOS PRELIMINARES** |  | 17d | 2026-03-31 | 2026-04-24 |  |  | 2026-03-31 | 2026-04-24 | 17d | 230,514.63 | 230,514.63 |
| 8 | 2.1 | Mobilização e implantação do canteiro |  | 15d | 2026-03-31 | 2026-04-22 | 4 | 100% | 2026-03-31 | 2026-04-22 | 15d | 25,846.13 | 25,846.13 |
| 9 | 2.2 | Locação topográfica da obra |  | 2d | 2026-04-23 | 2026-04-24 | 8 | 100% | 2026-04-23 | 2026-04-24 | 2d |  |  |
| 10 | 2.3 | Instalações provisórias, EPC, ferramentas e controle tecnológico |  | 10d | 2026-03-31 | 2026-04-14 | 8SS | 100% | 2026-03-31 | 2026-04-14 | 10d | 204,668.5 | 204,668.5 |
| 11 | 3 | **INFRAESTRUTURA E FUNDAÇÕES** |  | 73d | 2026-04-27 | 2026-08-07 |  |  | 2026-04-27 | 2026-08-07 | 73d | 204,718.43 | 204,718.43 |
| 12 | 3.1 | **Fundações** |  | 11d | 2026-04-27 | 2026-05-12 |  |  | 2026-04-27 | 2026-05-12 | 11d | 190,718.43 | 190,718.43 |
| 13 | 3.1.1 | Escavação mecânica das estacas |  | 4d | 2026-04-27 | 2026-04-30 | 9 | 100% | 2026-04-27 | 2026-04-30 | 4d |  |  |
| 14 | 3.1.2 | Armação das estacas |  | 4d | 2026-04-29 | 2026-05-05 | 13SS+2d | 100% | 2026-04-29 | 2026-05-05 | 4d |  |  |
| 15 | 3.1.3 | Concretagem das estacas |  | 5d | 2026-05-06 | 2026-05-12 | 14 | 100% | 2026-05-06 | 2026-05-12 | 5d | 190,718.43 | 190,718.43 |
| 16 | 3.2 | **Transição-Baldrame** |  | 43d | 2026-05-18 | 2026-07-16 |  |  | 2026-05-18 | 2026-07-16 | 43d |  |  |
| 17 | 3.2.1 | Forma - baldrame |  | 20d | 2026-05-18 | 2026-06-15 | 15FS+3d | 100% | 2026-05-18 | 2026-06-15 | 20d |  |  |
| 18 | 3.2.2 | Armação - baldrame |  | 4d | 2026-06-16 | 2026-06-19 | 17 | 100% | 2026-06-16 | 2026-06-19 | 4d |  |  |
| 19 | 3.2.3 | Concretagem - baldrame |  | 1d | 2026-06-23 | 2026-06-23 | 18FS+1d | 100% | 2026-06-23 | 2026-06-23 | 1d |  |  |
| 20 | 3.2.4 | Desforma - baldrame |  | 7d | 2026-07-03 | 2026-07-13 | 19FS+7d | 100% | 2026-07-03 | 2026-07-13 | 7d |  |  |
| 21 | 3.2.5 | Impermeabilização de vigas baldrame |  | 3d | 2026-07-14 | 2026-07-16 | 20 | 100% | 2026-07-14 | 2026-07-16 | 3d |  |  |
| 22 | 3.3 | **Contenções e Infra Subterrânea** |  | 15d | 2026-07-17 | 2026-08-06 |  |  | 2026-07-17 | 2026-08-06 | 15d | 14,000 | 14,000 |
| 23 | 3.3.1 | Muro de arrimo de divisa (40m x 1,0m) |  | 15d | 2026-07-17 | 2026-08-06 | 21 | 100% | 2026-07-17 | 2026-08-06 | 15d |  |  |
| 24 | 3.3.2 | Cisterna e infraestrutura subterrânea |  | 10d | 2026-07-17 | 2026-07-30 | 21 | 100% | 2026-07-17 | 2026-07-30 | 10d | 14,000 | 14,000 |
| 25 | 3.4 | MARCO: Infraestrutura e fundacoes concluídas | milestone | 0d | 2026-08-07 | 2026-08-07 | 23, 24 | 100% | 2026-08-07 | 2026-08-07 | 0d |  |  |

Notes:
- 3: Concluído - alvará emitido
- 6: Nível de esforço - acompanha a duração da obra

| ID | WBS | Task | Duration | Start | Finish | Predecessors | Baseline start | Baseline finish | Baseline duration | Constraint | Cost | Baseline cost |
| --- | --- | --- | --- | --- | --- | --- | --- | --- | --- | --- | --- | --- |
| 26 | 4 | **SUPRAESTRUTURA - ALVENARIA ESTRUTURAL** | 188d | 2026-10-01 | 2027-07-07 |  | 2026-10-01 | 2027-07-07 | 188d |  | 1,575,966.13 | 1,575,966.13 |
| 27 | 4.1 | **Térreo** | 33d | 2026-10-01 | 2026-11-18 |  | 2026-10-01 | 2026-11-18 | 33d |  | 120,824.07 | 120,824.07 |
| 28 | 4.1.1 | Marcação 1ª fiada | 2d | 2026-10-01 | 2026-10-02 | 25 | 2026-10-01 | 2026-10-02 | 2d | start no earlier than 2026-10-01 | 15,103.01 | 15,103.01 |
| 29 | 4.1.2 | Elevação alvenaria estrutural | 8d | 2026-10-02 | 2026-10-14 | 28SS+1d | 2026-10-02 | 2026-10-14 | 8d |  | 15,103.01 | 15,103.01 |
| 30 | 4.1.3 | Grauteamento e armação vertical | 4d | 2026-10-09 | 2026-10-15 | 29SS+5d | 2026-10-09 | 2026-10-15 | 4d |  | 15,103.01 | 15,103.01 |
| 31 | 4.1.4 | Cinta de amarração / verga-contraverga | 2d | 2026-10-15 | 2026-10-16 | 29 | 2026-10-15 | 2026-10-16 | 2d |  | 15,103.01 | 15,103.01 |
| 32 | 4.1.5 | Forma de laje e vigas | 4d | 2026-10-15 | 2026-10-20 | 31SS | 2026-10-15 | 2026-10-20 | 4d |  | 15,103.01 | 15,103.01 |
| 33 | 4.1.6 | Armação de laje e vigas | 3d | 2026-10-16 | 2026-10-20 | 32SS+1d | 2026-10-16 | 2026-10-20 | 3d |  | 15,103.01 | 15,103.01 |
| 34 | 4.1.7 | Concretagem da laje | 1d | 2026-10-21 | 2026-10-21 | 33 | 2026-10-21 | 2026-10-21 | 1d |  | 15,103.01 | 15,103.01 |
| 35 | 4.1.8 | Cura e desforma da laje | 4d | 2026-11-13 | 2026-11-18 | 34FS+15d | 2026-11-13 | 2026-11-18 | 4d |  | 15,103.01 | 15,103.01 |
| 36 | 4.2 | **Pav. 01** | 33d | 2026-10-22 | 2026-12-09 |  | 2026-10-22 | 2026-12-09 | 33d |  | 120,824.07 | 120,824.07 |
| 37 | 4.2.1 | Marcação 1ª fiada | 2d | 2026-10-22 | 2026-10-23 | 34 | 2026-10-22 | 2026-10-23 | 2d |  | 15,103.01 | 15,103.01 |
| 38 | 4.2.2 | Elevação alvenaria estrutural | 8d | 2026-10-23 | 2026-11-04 | 37SS+1d | 2026-10-23 | 2026-11-04 | 8d |  | 15,103.01 | 15,103.01 |
| 39 | 4.2.3 | Grauteamento e armação vertical | 4d | 2026-10-30 | 2026-11-05 | 38SS+5d | 2026-10-30 | 2026-11-05 | 4d |  | 15,103.01 | 15,103.01 |
| 40 | 4.2.4 | Cinta de amarração / verga-contraverga | 2d | 2026-11-05 | 2026-11-06 | 38 | 2026-11-05 | 2026-11-06 | 2d |  | 15,103.01 | 15,103.01 |
| 41 | 4.2.5 | Forma de laje e vigas | 4d | 2026-11-05 | 2026-11-10 | 40SS | 2026-11-05 | 2026-11-10 | 4d |  | 15,103.01 | 15,103.01 |
| 42 | 4.2.6 | Armação de laje e vigas | 3d | 2026-11-06 | 2026-11-10 | 41SS+1d | 2026-11-06 | 2026-11-10 | 3d |  | 15,103.01 | 15,103.01 |
| 43 | 4.2.7 | Concretagem da laje | 1d | 2026-11-11 | 2026-11-11 | 42 | 2026-11-11 | 2026-11-11 | 1d |  | 15,103.01 | 15,103.01 |
| 44 | 4.2.8 | Cura e desforma da laje | 4d | 2026-12-04 | 2026-12-09 | 43FS+15d | 2026-12-04 | 2026-12-09 | 4d |  | 15,103.01 | 15,103.01 |
| 45 | 4.3 | **Pav. 02** | 33d | 2026-11-12 | 2027-01-04 |  | 2026-11-12 | 2027-01-04 | 33d |  | 120,824.07 | 120,824.07 |
| 46 | 4.3.1 | Marcação 1ª fiada | 2d | 2026-11-12 | 2026-11-13 | 43 | 2026-11-12 | 2026-11-13 | 2d |  | 15,103.01 | 15,103.01 |
| 47 | 4.3.2 | Elevação alvenaria estrutural | 8d | 2026-11-13 | 2026-11-25 | 46SS+1d | 2026-11-13 | 2026-11-25 | 8d |  | 15,103.01 | 15,103.01 |
| 48 | 4.3.3 | Grauteamento e armação vertical | 4d | 2026-11-23 | 2026-11-26 | 47SS+5d | 2026-11-23 | 2026-11-26 | 4d |  | 15,103.01 | 15,103.01 |
| 49 | 4.3.4 | Cinta de amarração / verga-contraverga | 2d | 2026-11-26 | 2026-11-27 | 47 | 2026-11-26 | 2026-11-27 | 2d |  | 15,103.01 | 15,103.01 |
| 50 | 4.3.5 | Forma de laje e vigas | 4d | 2026-11-26 | 2026-12-01 | 49SS | 2026-11-26 | 2026-12-01 | 4d |  | 15,103.01 | 15,103.01 |
| 51 | 4.3.6 | Armação de laje e vigas | 3d | 2026-11-27 | 2026-12-01 | 50SS+1d | 2026-11-27 | 2026-12-01 | 3d |  | 15,103.01 | 15,103.01 |
| 52 | 4.3.7 | Concretagem da laje | 1d | 2026-12-02 | 2026-12-02 | 51 | 2026-12-02 | 2026-12-02 | 1d |  | 15,103.01 | 15,103.01 |
| 53 | 4.3.8 | Cura e desforma da laje | 4d | 2026-12-28 | 2027-01-04 | 52FS+15d | 2026-12-28 | 2027-01-04 | 4d |  | 15,103.01 | 15,103.01 |

| ID | WBS | Task | Duration | Start | Finish | Predecessors | Baseline start | Baseline finish | Baseline duration | Cost | Baseline cost |
| --- | --- | --- | --- | --- | --- | --- | --- | --- | --- | --- | --- |
| 54 | 4.4 | **Pav. 03** | 33d | 2026-12-03 | 2027-01-22 |  | 2026-12-03 | 2027-01-22 | 33d | 120,824.07 | 120,824.07 |
| 55 | 4.4.1 | Marcação 1ª fiada | 2d | 2026-12-03 | 2026-12-04 | 52 | 2026-12-03 | 2026-12-04 | 2d | 15,103.01 | 15,103.01 |
| 56 | 4.4.2 | Elevação alvenaria estrutural | 8d | 2026-12-04 | 2026-12-15 | 55SS+1d | 2026-12-04 | 2026-12-15 | 8d | 15,103.01 | 15,103.01 |
| 57 | 4.4.3 | Grauteamento e armação vertical | 4d | 2026-12-11 | 2026-12-16 | 56SS+5d | 2026-12-11 | 2026-12-16 | 4d | 15,103.01 | 15,103.01 |
| 58 | 4.4.4 | Cinta de amarração / verga-contraverga | 2d | 2026-12-16 | 2026-12-17 | 56 | 2026-12-16 | 2026-12-17 | 2d | 15,103.01 | 15,103.01 |
| 59 | 4.4.5 | Forma de laje e vigas | 4d | 2026-12-16 | 2026-12-21 | 58SS | 2026-12-16 | 2026-12-21 | 4d | 15,103.01 | 15,103.01 |
| 60 | 4.4.6 | Armação de laje e vigas | 3d | 2026-12-17 | 2026-12-21 | 59SS+1d | 2026-12-17 | 2026-12-21 | 3d | 15,103.01 | 15,103.01 |
| 61 | 4.4.7 | Concretagem da laje | 1d | 2026-12-22 | 2026-12-22 | 60 | 2026-12-22 | 2026-12-22 | 1d | 15,103.01 | 15,103.01 |
| 62 | 4.4.8 | Cura e desforma da laje | 4d | 2027-01-19 | 2027-01-22 | 61FS+15d | 2027-01-19 | 2027-01-22 | 4d | 15,103.01 | 15,103.01 |
| 63 | 4.5 | **Pav. 04** | 33d | 2026-12-23 | 2027-02-15 |  | 2026-12-23 | 2027-02-15 | 33d | 120,824.07 | 120,824.07 |
| 64 | 4.5.1 | Marcação 1ª fiada | 2d | 2026-12-23 | 2026-12-28 | 61 | 2026-12-23 | 2026-12-28 | 2d | 15,103.01 | 15,103.01 |
| 65 | 4.5.2 | Elevação alvenaria estrutural | 8d | 2026-12-28 | 2027-01-08 | 64SS+1d | 2026-12-28 | 2027-01-08 | 8d | 15,103.01 | 15,103.01 |
| 66 | 4.5.3 | Grauteamento e armação vertical | 4d | 2027-01-06 | 2027-01-11 | 65SS+5d | 2027-01-06 | 2027-01-11 | 4d | 15,103.01 | 15,103.01 |
| 67 | 4.5.4 | Cinta de amarração / verga-contraverga | 2d | 2027-01-11 | 2027-01-12 | 65 | 2027-01-11 | 2027-01-12 | 2d | 15,103.01 | 15,103.01 |
| 68 | 4.5.5 | Forma de laje e vigas | 4d | 2027-01-11 | 2027-01-14 | 67SS | 2027-01-11 | 2027-01-14 | 4d | 15,103.01 | 15,103.01 |
| 69 | 4.5.6 | Armação de laje e vigas | 3d | 2027-01-12 | 2027-01-14 | 68SS+1d | 2027-01-12 | 2027-01-14 | 3d | 15,103.01 | 15,103.01 |
| 70 | 4.5.7 | Concretagem da laje | 1d | 2027-01-15 | 2027-01-15 | 69 | 2027-01-15 | 2027-01-15 | 1d | 15,103.01 | 15,103.01 |
| 71 | 4.5.8 | Cura e desforma da laje | 4d | 2027-02-10 | 2027-02-15 | 70FS+15d | 2027-02-10 | 2027-02-15 | 4d | 15,103.01 | 15,103.01 |
| 72 | 4.6 | **Pav. 05** | 33d | 2027-01-18 | 2027-03-05 |  | 2027-01-18 | 2027-03-05 | 33d | 120,824.07 | 120,824.07 |
| 73 | 4.6.1 | Marcação 1ª fiada | 2d | 2027-01-18 | 2027-01-19 | 70 | 2027-01-18 | 2027-01-19 | 2d | 15,103.01 | 15,103.01 |
| 74 | 4.6.2 | Elevação alvenaria estrutural | 8d | 2027-01-19 | 2027-01-28 | 73SS+1d | 2027-01-19 | 2027-01-28 | 8d | 15,103.01 | 15,103.01 |
| 75 | 4.6.3 | Grauteamento e armação vertical | 4d | 2027-01-26 | 2027-01-29 | 74SS+5d | 2027-01-26 | 2027-01-29 | 4d | 15,103.01 | 15,103.01 |
| 76 | 4.6.4 | Cinta de amarração / verga-contraverga | 2d | 2027-01-29 | 2027-02-01 | 74 | 2027-01-29 | 2027-02-01 | 2d | 15,103.01 | 15,103.01 |
| 77 | 4.6.5 | Forma de laje e vigas | 4d | 2027-01-29 | 2027-02-03 | 76SS | 2027-01-29 | 2027-02-03 | 4d | 15,103.01 | 15,103.01 |
| 78 | 4.6.6 | Armação de laje e vigas | 3d | 2027-02-01 | 2027-02-03 | 77SS+1d | 2027-02-01 | 2027-02-03 | 3d | 15,103.01 | 15,103.01 |
| 79 | 4.6.7 | Concretagem da laje | 1d | 2027-02-04 | 2027-02-04 | 78 | 2027-02-04 | 2027-02-04 | 1d | 15,103.01 | 15,103.01 |
| 80 | 4.6.8 | Cura e desforma da laje | 4d | 2027-03-02 | 2027-03-05 | 79FS+15d | 2027-03-02 | 2027-03-05 | 4d | 15,103.01 | 15,103.01 |

| ID | WBS | Task | Duration | Start | Finish | Predecessors | Baseline start | Baseline finish | Baseline duration | Cost | Baseline cost |
| --- | --- | --- | --- | --- | --- | --- | --- | --- | --- | --- | --- |
| 81 | 4.7 | **Pav. 06** | 33d | 2027-02-05 | 2027-03-25 |  | 2027-02-05 | 2027-03-25 | 33d | 120,824.07 | 120,824.07 |
| 82 | 4.7.1 | Marcação 1ª fiada | 2d | 2027-02-05 | 2027-02-10 | 79 | 2027-02-05 | 2027-02-10 | 2d | 15,103.01 | 15,103.01 |
| 83 | 4.7.2 | Elevação alvenaria estrutural | 8d | 2027-02-10 | 2027-02-19 | 82SS+1d | 2027-02-10 | 2027-02-19 | 8d | 15,103.01 | 15,103.01 |
| 84 | 4.7.3 | Grauteamento e armação vertical | 4d | 2027-02-17 | 2027-02-22 | 83SS+5d | 2027-02-17 | 2027-02-22 | 4d | 15,103.01 | 15,103.01 |
| 85 | 4.7.4 | Cinta de amarração / verga-contraverga | 2d | 2027-02-22 | 2027-02-23 | 83 | 2027-02-22 | 2027-02-23 | 2d | 15,103.01 | 15,103.01 |
| 86 | 4.7.5 | Forma de laje e vigas | 4d | 2027-02-22 | 2027-02-25 | 85SS | 2027-02-22 | 2027-02-25 | 4d | 15,103.01 | 15,103.01 |
| 87 | 4.7.6 | Armação de laje e vigas | 3d | 2027-02-23 | 2027-02-25 | 86SS+1d | 2027-02-23 | 2027-02-25 | 3d | 15,103.01 | 15,103.01 |
| 88 | 4.7.7 | Concretagem da laje | 1d | 2027-02-26 | 2027-02-26 | 87 | 2027-02-26 | 2027-02-26 | 1d | 15,103.01 | 15,103.01 |
| 89 | 4.7.8 | Cura e desforma da laje | 4d | 2027-03-22 | 2027-03-25 | 88FS+15d | 2027-03-22 | 2027-03-25 | 4d | 15,103.01 | 15,103.01 |
| 90 | 4.8 | **Pav. 07** | 33d | 2027-03-01 | 2027-04-15 |  | 2027-03-01 | 2027-04-15 | 33d | 120,824.07 | 120,824.07 |
| 91 | 4.8.1 | Marcação 1ª fiada | 2d | 2027-03-01 | 2027-03-02 | 88 | 2027-03-01 | 2027-03-02 | 2d | 15,103.01 | 15,103.01 |
| 92 | 4.8.2 | Elevação alvenaria estrutural | 8d | 2027-03-02 | 2027-03-11 | 91SS+1d | 2027-03-02 | 2027-03-11 | 8d | 15,103.01 | 15,103.01 |
| 93 | 4.8.3 | Grauteamento e armação vertical | 4d | 2027-03-09 | 2027-03-12 | 92SS+5d | 2027-03-09 | 2027-03-12 | 4d | 15,103.01 | 15,103.01 |
| 94 | 4.8.4 | Cinta de amarração / verga-contraverga | 2d | 2027-03-12 | 2027-03-15 | 92 | 2027-03-12 | 2027-03-15 | 2d | 15,103.01 | 15,103.01 |
| 95 | 4.8.5 | Forma de laje e vigas | 4d | 2027-03-12 | 2027-03-17 | 94SS | 2027-03-12 | 2027-03-17 | 4d | 15,103.01 | 15,103.01 |
| 96 | 4.8.6 | Armação de laje e vigas | 3d | 2027-03-15 | 2027-03-17 | 95SS+1d | 2027-03-15 | 2027-03-17 | 3d | 15,103.01 | 15,103.01 |
| 97 | 4.8.7 | Concretagem da laje | 1d | 2027-03-18 | 2027-03-18 | 96 | 2027-03-18 | 2027-03-18 | 1d | 15,103.01 | 15,103.01 |
| 98 | 4.8.8 | Cura e desforma da laje | 4d | 2027-04-12 | 2027-04-15 | 97FS+15d | 2027-04-12 | 2027-04-15 | 4d | 15,103.01 | 15,103.01 |
| 99 | 4.9 | **Pav. 08** | 33d | 2027-03-19 | 2027-05-06 |  | 2027-03-19 | 2027-05-06 | 33d | 120,824.07 | 120,824.07 |
| 100 | 4.9.1 | Marcação 1ª fiada | 2d | 2027-03-19 | 2027-03-22 | 97 | 2027-03-19 | 2027-03-22 | 2d | 15,103.01 | 15,103.01 |
| 101 | 4.9.2 | Elevação alvenaria estrutural | 8d | 2027-03-22 | 2027-04-01 | 100SS+1d | 2027-03-22 | 2027-04-01 | 8d | 15,103.01 | 15,103.01 |
| 102 | 4.9.3 | Grauteamento e armação vertical | 4d | 2027-03-30 | 2027-04-02 | 101SS+5d | 2027-03-30 | 2027-04-02 | 4d | 15,103.01 | 15,103.01 |
| 103 | 4.9.4 | Cinta de amarração / verga-contraverga | 2d | 2027-04-02 | 2027-04-05 | 101 | 2027-04-02 | 2027-04-05 | 2d | 15,103.01 | 15,103.01 |
| 104 | 4.9.5 | Forma de laje e vigas | 4d | 2027-04-02 | 2027-04-07 | 103SS | 2027-04-02 | 2027-04-07 | 4d | 15,103.01 | 15,103.01 |
| 105 | 4.9.6 | Armação de laje e vigas | 3d | 2027-04-05 | 2027-04-07 | 104SS+1d | 2027-04-05 | 2027-04-07 | 3d | 15,103.01 | 15,103.01 |
| 106 | 4.9.7 | Concretagem da laje | 1d | 2027-04-08 | 2027-04-08 | 105 | 2027-04-08 | 2027-04-08 | 1d | 15,103.01 | 15,103.01 |
| 107 | 4.9.8 | Cura e desforma da laje | 4d | 2027-05-03 | 2027-05-06 | 106FS+15d | 2027-05-03 | 2027-05-06 | 4d | 15,103.01 | 15,103.01 |

| ID | WBS | Task | Type | Duration | Start | Finish | Predecessors | Baseline start | Baseline finish | Baseline duration | Cost | Baseline cost |
| --- | --- | --- | --- | --- | --- | --- | --- | --- | --- | --- | --- | --- |
| 108 | 4.10 | **Pav. 09** |  | 33d | 2027-04-09 | 2027-05-26 |  | 2027-04-09 | 2027-05-26 | 33d | 120,824.07 | 120,824.07 |
| 109 | 4.10.1 | Marcação 1ª fiada |  | 2d | 2027-04-09 | 2027-04-12 | 106 | 2027-04-09 | 2027-04-12 | 2d | 15,103.01 | 15,103.01 |
| 110 | 4.10.2 | Elevação alvenaria estrutural |  | 8d | 2027-04-12 | 2027-04-22 | 109SS+1d | 2027-04-12 | 2027-04-22 | 8d | 15,103.01 | 15,103.01 |
| 111 | 4.10.3 | Grauteamento e armação vertical |  | 4d | 2027-04-19 | 2027-04-23 | 110SS+5d | 2027-04-19 | 2027-04-23 | 4d | 15,103.01 | 15,103.01 |
| 112 | 4.10.4 | Cinta de amarração / verga-contraverga |  | 2d | 2027-04-23 | 2027-04-26 | 110 | 2027-04-23 | 2027-04-26 | 2d | 15,103.01 | 15,103.01 |
| 113 | 4.10.5 | Forma de laje e vigas |  | 4d | 2027-04-23 | 2027-04-28 | 112SS | 2027-04-23 | 2027-04-28 | 4d | 15,103.01 | 15,103.01 |
| 114 | 4.10.6 | Armação de laje e vigas |  | 3d | 2027-04-26 | 2027-04-28 | 113SS+1d | 2027-04-26 | 2027-04-28 | 3d | 15,103.01 | 15,103.01 |
| 115 | 4.10.7 | Concretagem da laje |  | 1d | 2027-04-29 | 2027-04-29 | 114 | 2027-04-29 | 2027-04-29 | 1d | 15,103.01 | 15,103.01 |
| 116 | 4.10.8 | Cura e desforma da laje |  | 4d | 2027-05-21 | 2027-05-26 | 115FS+15d | 2027-05-21 | 2027-05-26 | 4d | 15,103.01 | 15,103.01 |
| 117 | 4.10.9 | MARCO: Topo da estrutura dos pavimentos-tipo | milestone | 0d | 2027-04-30 | 2027-04-30 | 115 | 2027-04-30 | 2027-04-30 | 0d |  |  |
| 118 | 4.11 | **Barrilete** |  | 33d | 2027-04-30 | 2027-06-16 |  | 2027-04-30 | 2027-06-16 | 33d | 120,824.07 | 120,824.07 |
| 119 | 4.11.1 | Marcação 1ª fiada |  | 2d | 2027-04-30 | 2027-05-03 | 115 | 2027-04-30 | 2027-05-03 | 2d | 15,103.01 | 15,103.01 |
| 120 | 4.11.2 | Elevação alvenaria estrutural |  | 8d | 2027-05-03 | 2027-05-12 | 119SS+1d | 2027-05-03 | 2027-05-12 | 8d | 15,103.01 | 15,103.01 |
| 121 | 4.11.3 | Grauteamento e armação vertical |  | 4d | 2027-05-10 | 2027-05-13 | 120SS+5d | 2027-05-10 | 2027-05-13 | 4d | 15,103.01 | 15,103.01 |
| 122 | 4.11.4 | Cinta de amarração / verga-contraverga |  | 2d | 2027-05-13 | 2027-05-14 | 120 | 2027-05-13 | 2027-05-14 | 2d | 15,103.01 | 15,103.01 |
| 123 | 4.11.5 | Forma de laje e vigas |  | 4d | 2027-05-13 | 2027-05-18 | 122SS | 2027-05-13 | 2027-05-18 | 4d | 15,103.01 | 15,103.01 |
| 124 | 4.11.6 | Armação de laje e vigas |  | 3d | 2027-05-14 | 2027-05-18 | 123SS+1d | 2027-05-14 | 2027-05-18 | 3d | 15,103.01 | 15,103.01 |
| 125 | 4.11.7 | Concretagem da laje |  | 1d | 2027-05-19 | 2027-05-19 | 124 | 2027-05-19 | 2027-05-19 | 1d | 15,103.01 | 15,103.01 |
| 126 | 4.11.8 | Cura e desforma da laje |  | 4d | 2027-06-11 | 2027-06-16 | 125FS+15d | 2027-06-11 | 2027-06-16 | 4d | 15,103.01 | 15,103.01 |
| 127 | 4.12 | **Reservatório** |  | 33d | 2027-05-20 | 2027-07-06 |  | 2027-05-20 | 2027-07-06 | 33d | 120,824.07 | 120,824.07 |
| 128 | 4.12.1 | Marcação 1ª fiada |  | 2d | 2027-05-20 | 2027-05-21 | 125 | 2027-05-20 | 2027-05-21 | 2d | 15,103.01 | 15,103.01 |
| 129 | 4.12.2 | Elevação alvenaria estrutural |  | 8d | 2027-05-21 | 2027-06-02 | 128SS+1d | 2027-05-21 | 2027-06-02 | 8d | 15,103.01 | 15,103.01 |
| 130 | 4.12.3 | Grauteamento e armação vertical |  | 4d | 2027-05-31 | 2027-06-03 | 129SS+5d | 2027-05-31 | 2027-06-03 | 4d | 15,103.01 | 15,103.01 |
| 131 | 4.12.4 | Cinta de amarração / verga-contraverga |  | 2d | 2027-06-03 | 2027-06-04 | 129 | 2027-06-03 | 2027-06-04 | 2d | 15,103.01 | 15,103.01 |
| 132 | 4.12.5 | Forma de laje e vigas |  | 4d | 2027-06-03 | 2027-06-08 | 131SS | 2027-06-03 | 2027-06-08 | 4d | 15,103.01 | 15,103.01 |
| 133 | 4.12.6 | Armação de laje e vigas |  | 3d | 2027-06-04 | 2027-06-08 | 132SS+1d | 2027-06-04 | 2027-06-08 | 3d | 15,103.01 | 15,103.01 |
| 134 | 4.12.7 | Concretagem da laje |  | 1d | 2027-06-09 | 2027-06-09 | 133 | 2027-06-09 | 2027-06-09 | 1d | 15,103.01 | 15,103.01 |
| 135 | 4.12.8 | Cura e desforma da laje |  | 4d | 2027-07-01 | 2027-07-06 | 134FS+15d | 2027-07-01 | 2027-07-06 | 4d | 15,103.01 | 15,103.01 |

| ID | WBS | Task | Type | Duration | Start | Finish | Predecessors | Baseline start | Baseline finish | Baseline duration | Cost | Baseline cost |
| --- | --- | --- | --- | --- | --- | --- | --- | --- | --- | --- | --- | --- |
| 136 | 4.13 | **Escadas de Concreto** |  | 60d | 2026-11-11 | 2027-02-11 |  | 2026-11-11 | 2027-02-11 | 60d | 126,077.29 | 126,077.29 |
| 137 | 4.13.1 | Escadas pré-moldadas e complementos (12 lances) |  | 60d | 2026-11-11 | 2027-02-11 | 43SS | 2026-11-11 | 2027-02-11 | 60d | 126,077.29 | 126,077.29 |
| 138 | 4.14 | MARCO: Estrutura 100% concluída (reservatorio) | milestone | 0d | 2027-07-07 | 2027-07-07 | 135, 137 | 2027-07-07 | 2027-07-07 | 0d |  |  |
| 139 | 5 | **APARTAMENTOS** |  | 359d | 2026-10-07 | 2028-03-20 |  | 2026-10-07 | 2028-03-20 | 359d | 2,352,060.65 | 2,352,060.65 |
| 140 | 5.1 | **Prumadas e prolongamentos (shafts)** |  | 131d | 2026-10-07 | 2027-04-22 |  | 2026-10-07 | 2027-04-22 | 131d |  |  |
| 141 | 5.1.1 | Térreo |  | 5d | 2026-10-07 | 2026-10-14 | 29SS+3d | 2026-10-07 | 2026-10-14 | 5d |  |  |
| 142 | 5.1.2 | Pav. 01 |  | 5d | 2026-10-28 | 2026-11-04 | 38SS+3d, 141 | 2026-10-28 | 2026-11-04 | 5d |  |  |
| 143 | 5.1.3 | Pav. 02 |  | 5d | 2026-11-18 | 2026-11-25 | 47SS+3d, 142 | 2026-11-18 | 2026-11-25 | 5d |  |  |
| 144 | 5.1.4 | Pav. 03 |  | 5d | 2026-12-09 | 2026-12-15 | 56SS+3d, 143 | 2026-12-09 | 2026-12-15 | 5d |  |  |
| 145 | 5.1.5 | Pav. 04 |  | 5d | 2027-01-04 | 2027-01-08 | 65SS+3d, 144 | 2027-01-04 | 2027-01-08 | 5d |  |  |
| 146 | 5.1.6 | Pav. 05 |  | 5d | 2027-01-22 | 2027-01-28 | 74SS+3d, 145 | 2027-01-22 | 2027-01-28 | 5d |  |  |
| 147 | 5.1.7 | Pav. 06 |  | 5d | 2027-02-15 | 2027-02-19 | 83SS+3d, 146 | 2027-02-15 | 2027-02-19 | 5d |  |  |
| 148 | 5.1.8 | Pav. 07 |  | 5d | 2027-03-05 | 2027-03-11 | 92SS+3d, 147 | 2027-03-05 | 2027-03-11 | 5d |  |  |
| 149 | 5.1.9 | Pav. 08 |  | 5d | 2027-03-25 | 2027-04-01 | 101SS+3d, 148 | 2027-03-25 | 2027-04-01 | 5d |  |  |
| 150 | 5.1.10 | Pav. 09 |  | 5d | 2027-04-15 | 2027-04-22 | 110SS+3d, 149 | 2027-04-15 | 2027-04-22 | 5d |  |  |
| 151 | 5.2 | **Elétrica embutida - eletrodutos e caixas** |  | 134d | 2026-10-07 | 2027-04-27 |  | 2026-10-07 | 2027-04-27 | 134d | 330,000 | 330,000 |
| 152 | 5.2.1 | Térreo |  | 8d | 2026-10-07 | 2026-10-19 | 29SS+3d | 2026-10-07 | 2026-10-19 | 8d | 33,000 | 33,000 |
| 153 | 5.2.2 | Pav. 01 |  | 8d | 2026-10-28 | 2026-11-09 | 38SS+3d, 152 | 2026-10-28 | 2026-11-09 | 8d | 33,000 | 33,000 |
| 154 | 5.2.3 | Pav. 02 |  | 8d | 2026-11-18 | 2026-11-30 | 47SS+3d, 153 | 2026-11-18 | 2026-11-30 | 8d | 33,000 | 33,000 |
| 155 | 5.2.4 | Pav. 03 |  | 8d | 2026-12-09 | 2026-12-18 | 56SS+3d, 154 | 2026-12-09 | 2026-12-18 | 8d | 33,000 | 33,000 |
| 156 | 5.2.5 | Pav. 04 |  | 8d | 2027-01-04 | 2027-01-13 | 65SS+3d, 155 | 2027-01-04 | 2027-01-13 | 8d | 33,000 | 33,000 |
| 157 | 5.2.6 | Pav. 05 |  | 8d | 2027-01-22 | 2027-02-02 | 74SS+3d, 156 | 2027-01-22 | 2027-02-02 | 8d | 33,000 | 33,000 |
| 158 | 5.2.7 | Pav. 06 |  | 8d | 2027-02-15 | 2027-02-24 | 83SS+3d, 157 | 2027-02-15 | 2027-02-24 | 8d | 33,000 | 33,000 |
| 159 | 5.2.8 | Pav. 07 |  | 8d | 2027-03-05 | 2027-03-16 | 92SS+3d, 158 | 2027-03-05 | 2027-03-16 | 8d | 33,000 | 33,000 |
| 160 | 5.2.9 | Pav. 08 |  | 8d | 2027-03-25 | 2027-04-06 | 101SS+3d, 159 | 2027-03-25 | 2027-04-06 | 8d | 33,000 | 33,000 |
| 161 | 5.2.10 | Pav. 09 |  | 8d | 2027-04-15 | 2027-04-27 | 110SS+3d, 160 | 2027-04-15 | 2027-04-27 | 8d | 33,000 | 33,000 |

Notes:
- 141: Alvenaria estrutural: não se corta parede portante. Executado de forma concomitante a elevacao da alvenaria e concluído antes da concretagem da laje.
- 142: Alvenaria estrutural: não se corta parede portante. Executado de forma concomitante a elevacao da alvenaria e concluído antes da concretagem da laje.
- 143: Alvenaria estrutural: não se corta parede portante. Executado de forma concomitante a elevacao da alvenaria e concluído antes da concretagem da laje.
- 144: Alvenaria estrutural: não se corta parede portante. Executado de forma concomitante a elevacao da alvenaria e concluído antes da concretagem da laje.
- 145: Alvenaria estrutural: não se corta parede portante. Executado de forma concomitante a elevacao da alvenaria e concluído antes da concretagem da laje.
- 146: Alvenaria estrutural: não se corta parede portante. Executado de forma concomitante a elevacao da alvenaria e concluído antes da concretagem da laje.
- 147: Alvenaria estrutural: não se corta parede portante. Executado de forma concomitante a elevacao da alvenaria e concluído antes da concretagem da laje.
- 148: Alvenaria estrutural: não se corta parede portante. Executado de forma concomitante a elevacao da alvenaria e concluído antes da concretagem da laje.
- 149: Alvenaria estrutural: não se corta parede portante. Executado de forma concomitante a elevacao da alvenaria e concluído antes da concretagem da laje.
- 150: Alvenaria estrutural: não se corta parede portante. Executado de forma concomitante a elevacao da alvenaria e concluído antes da concretagem da laje.
- 152: Alvenaria estrutural: não se corta parede portante. Executado de forma concomitante a elevacao da alvenaria e concluído antes da concretagem da laje.
- 153: Alvenaria estrutural: não se corta parede portante. Executado de forma concomitante a elevacao da alvenaria e concluído antes da concretagem da laje.
- 154: Alvenaria estrutural: não se corta parede portante. Executado de forma concomitante a elevacao da alvenaria e concluído antes da concretagem da laje.
- 155: Alvenaria estrutural: não se corta parede portante. Executado de forma concomitante a elevacao da alvenaria e concluído antes da concretagem da laje.
- 156: Alvenaria estrutural: não se corta parede portante. Executado de forma concomitante a elevacao da alvenaria e concluído antes da concretagem da laje.
- 157: Alvenaria estrutural: não se corta parede portante. Executado de forma concomitante a elevacao da alvenaria e concluído antes da concretagem da laje.
- 158: Alvenaria estrutural: não se corta parede portante. Executado de forma concomitante a elevacao da alvenaria e concluído antes da concretagem da laje.
- 159: Alvenaria estrutural: não se corta parede portante. Executado de forma concomitante a elevacao da alvenaria e concluído antes da concretagem da laje.
- 160: Alvenaria estrutural: não se corta parede portante. Executado de forma concomitante a elevacao da alvenaria e concluído antes da concretagem da laje.
- 161: Alvenaria estrutural: não se corta parede portante. Executado de forma concomitante a elevacao da alvenaria e concluído antes da concretagem da laje.

| ID | WBS | Task | Duration | Start | Finish | Predecessors | Baseline start | Baseline finish | Baseline duration | Cost | Baseline cost |
| --- | --- | --- | --- | --- | --- | --- | --- | --- | --- | --- | --- |
| 162 | 5.3 | **Contramarcos e marcos de esquadria** | 131d | 2026-11-24 | 2027-06-07 |  | 2026-11-24 | 2027-06-07 | 131d |  |  |
| 163 | 5.3.1 | Térreo | 5d | 2026-11-24 | 2026-11-30 | 35FS+2d | 2026-11-24 | 2026-11-30 | 5d |  |  |
| 164 | 5.3.2 | Pav. 01 | 5d | 2026-12-14 | 2026-12-18 | 44FS+2d, 163 | 2026-12-14 | 2026-12-18 | 5d |  |  |
| 165 | 5.3.3 | Pav. 02 | 5d | 2027-01-07 | 2027-01-13 | 53FS+2d, 164 | 2027-01-07 | 2027-01-13 | 5d |  |  |
| 166 | 5.3.4 | Pav. 03 | 5d | 2027-01-27 | 2027-02-02 | 62FS+2d, 165 | 2027-01-27 | 2027-02-02 | 5d |  |  |
| 167 | 5.3.5 | Pav. 04 | 5d | 2027-02-18 | 2027-02-24 | 71FS+2d, 166 | 2027-02-18 | 2027-02-24 | 5d |  |  |
| 168 | 5.3.6 | Pav. 05 | 5d | 2027-03-10 | 2027-03-16 | 80FS+2d, 167 | 2027-03-10 | 2027-03-16 | 5d |  |  |
| 169 | 5.3.7 | Pav. 06 | 5d | 2027-03-31 | 2027-04-06 | 89FS+2d, 168 | 2027-03-31 | 2027-04-06 | 5d |  |  |
| 170 | 5.3.8 | Pav. 07 | 5d | 2027-04-20 | 2027-04-27 | 98FS+2d, 169 | 2027-04-20 | 2027-04-27 | 5d |  |  |
| 171 | 5.3.9 | Pav. 08 | 5d | 2027-05-11 | 2027-05-17 | 107FS+2d, 170 | 2027-05-11 | 2027-05-17 | 5d |  |  |
| 172 | 5.3.10 | Pav. 09 | 5d | 2027-06-01 | 2027-06-07 | 116FS+2d, 171 | 2027-06-01 | 2027-06-07 | 5d |  |  |
| 173 | 5.4 | **Instalações hidrossanitárias - parede e teto** | 138d | 2026-12-01 | 2027-06-23 |  | 2026-12-01 | 2027-06-23 | 138d | 269,883.85 | 269,883.85 |
| 174 | 5.4.1 | Térreo | 12d | 2026-12-01 | 2026-12-16 | 163 | 2026-12-01 | 2026-12-16 | 12d | 26,988.38 | 26,988.38 |
| 175 | 5.4.2 | Pav. 01 | 12d | 2026-12-21 | 2027-01-11 | 164, 174 | 2026-12-21 | 2027-01-11 | 12d | 26,988.38 | 26,988.38 |
| 176 | 5.4.3 | Pav. 02 | 12d | 2027-01-14 | 2027-01-29 | 165, 175 | 2027-01-14 | 2027-01-29 | 12d | 26,988.38 | 26,988.38 |
| 177 | 5.4.4 | Pav. 03 | 12d | 2027-02-03 | 2027-02-22 | 166, 176 | 2027-02-03 | 2027-02-22 | 12d | 26,988.38 | 26,988.38 |
| 178 | 5.4.5 | Pav. 04 | 12d | 2027-02-25 | 2027-03-12 | 167, 177 | 2027-02-25 | 2027-03-12 | 12d | 26,988.38 | 26,988.38 |
| 179 | 5.4.6 | Pav. 05 | 12d | 2027-03-17 | 2027-04-02 | 168, 178 | 2027-03-17 | 2027-04-02 | 12d | 26,988.38 | 26,988.38 |
| 180 | 5.4.7 | Pav. 06 | 12d | 2027-04-07 | 2027-04-23 | 169, 179 | 2027-04-07 | 2027-04-23 | 12d | 26,988.38 | 26,988.38 |
| 181 | 5.4.8 | Pav. 07 | 12d | 2027-04-28 | 2027-05-13 | 170, 180 | 2027-04-28 | 2027-05-13 | 12d | 26,988.38 | 26,988.38 |
| 182 | 5.4.9 | Pav. 08 | 12d | 2027-05-18 | 2027-06-03 | 171, 181 | 2027-05-18 | 2027-06-03 | 12d | 26,988.38 | 26,988.38 |
| 183 | 5.4.10 | Pav. 09 | 12d | 2027-06-08 | 2027-06-23 | 172, 182 | 2027-06-08 | 2027-06-23 | 12d | 26,988.38 | 26,988.38 |
| 184 | 5.5 | **Infraestrutura de ar condicionado** | 131d | 2026-12-17 | 2027-06-30 |  | 2026-12-17 | 2027-06-30 | 131d | 71,760.15 | 71,760.15 |
| 185 | 5.5.1 | Térreo | 5d | 2026-12-17 | 2026-12-23 | 174 | 2026-12-17 | 2026-12-23 | 5d | 7,176.01 | 7,176.01 |
| 186 | 5.5.2 | Pav. 01 | 5d | 2027-01-12 | 2027-01-18 | 175, 185 | 2027-01-12 | 2027-01-18 | 5d | 7,176.01 | 7,176.01 |
| 187 | 5.5.3 | Pav. 02 | 5d | 2027-02-01 | 2027-02-05 | 176, 186 | 2027-02-01 | 2027-02-05 | 5d | 7,176.01 | 7,176.01 |
| 188 | 5.5.4 | Pav. 03 | 5d | 2027-02-23 | 2027-03-01 | 177, 187 | 2027-02-23 | 2027-03-01 | 5d | 7,176.01 | 7,176.01 |
| 189 | 5.5.5 | Pav. 04 | 5d | 2027-03-15 | 2027-03-19 | 178, 188 | 2027-03-15 | 2027-03-19 | 5d | 7,176.01 | 7,176.01 |
| 190 | 5.5.6 | Pav. 05 | 5d | 2027-04-05 | 2027-04-09 | 179, 189 | 2027-04-05 | 2027-04-09 | 5d | 7,176.01 | 7,176.01 |
| 191 | 5.5.7 | Pav. 06 | 5d | 2027-04-26 | 2027-04-30 | 180, 190 | 2027-04-26 | 2027-04-30 | 5d | 7,176.01 | 7,176.01 |
| 192 | 5.5.8 | Pav. 07 | 5d | 2027-05-14 | 2027-05-20 | 181, 191 | 2027-05-14 | 2027-05-20 | 5d | 7,176.01 | 7,176.01 |
| 193 | 5.5.9 | Pav. 08 | 5d | 2027-06-04 | 2027-06-10 | 182, 192 | 2027-06-04 | 2027-06-10 | 5d | 7,176.01 | 7,176.01 |
| 194 | 5.5.10 | Pav. 09 | 5d | 2027-06-24 | 2027-06-30 | 183, 193 | 2027-06-24 | 2027-06-30 | 5d | 7,176.01 | 7,176.01 |

| ID | WBS | Task | Duration | Start | Finish | Predecessors | Baseline start | Baseline finish | Baseline duration | Cost | Baseline cost |
| --- | --- | --- | --- | --- | --- | --- | --- | --- | --- | --- | --- |
| 195 | 5.6 | **Emboço de argamassa - áreas molhadas** | 134d | 2026-12-28 | 2027-07-12 |  | 2026-12-28 | 2027-07-12 | 134d | 33,259.83 | 33,259.83 |
| 196 | 5.6.1 | Térreo | 8d | 2026-12-28 | 2027-01-08 | 185 | 2026-12-28 | 2027-01-08 | 8d | 3,325.98 | 3,325.98 |
| 197 | 5.6.2 | Pav. 01 | 8d | 2027-01-19 | 2027-01-28 | 186, 196 | 2027-01-19 | 2027-01-28 | 8d | 3,325.98 | 3,325.98 |
| 198 | 5.6.3 | Pav. 02 | 8d | 2027-02-10 | 2027-02-19 | 187, 197 | 2027-02-10 | 2027-02-19 | 8d | 3,325.98 | 3,325.98 |
| 199 | 5.6.4 | Pav. 03 | 8d | 2027-03-02 | 2027-03-11 | 188, 198 | 2027-03-02 | 2027-03-11 | 8d | 3,325.98 | 3,325.98 |
| 200 | 5.6.5 | Pav. 04 | 8d | 2027-03-22 | 2027-04-01 | 189, 199 | 2027-03-22 | 2027-04-01 | 8d | 3,325.98 | 3,325.98 |
| 201 | 5.6.6 | Pav. 05 | 8d | 2027-04-12 | 2027-04-22 | 190, 200 | 2027-04-12 | 2027-04-22 | 8d | 3,325.98 | 3,325.98 |
| 202 | 5.6.7 | Pav. 06 | 8d | 2027-05-03 | 2027-05-12 | 191, 201 | 2027-05-03 | 2027-05-12 | 8d | 3,325.98 | 3,325.98 |
| 203 | 5.6.8 | Pav. 07 | 8d | 2027-05-21 | 2027-06-02 | 192, 202 | 2027-05-21 | 2027-06-02 | 8d | 3,325.98 | 3,325.98 |
| 204 | 5.6.9 | Pav. 08 | 8d | 2027-06-11 | 2027-06-22 | 193, 203 | 2027-06-11 | 2027-06-22 | 8d | 3,325.98 | 3,325.98 |
| 205 | 5.6.10 | Pav. 09 | 8d | 2027-07-01 | 2027-07-12 | 194, 204 | 2027-07-01 | 2027-07-12 | 8d | 3,325.98 | 3,325.98 |
| 206 | 5.7 | **Impermeabilização de áreas molhadas** | 131d | 2027-01-13 | 2027-07-21 |  | 2027-01-13 | 2027-07-21 | 131d | 53,568.97 | 53,568.97 |
| 207 | 5.7.1 | Térreo | 5d | 2027-01-13 | 2027-01-19 | 196FS+2d | 2027-01-13 | 2027-01-19 | 5d | 5,356.9 | 5,356.9 |
| 208 | 5.7.2 | Pav. 01 | 5d | 2027-02-02 | 2027-02-10 | 197FS+2d, 207 | 2027-02-02 | 2027-02-10 | 5d | 5,356.9 | 5,356.9 |
| 209 | 5.7.3 | Pav. 02 | 5d | 2027-02-24 | 2027-03-02 | 198FS+2d, 208 | 2027-02-24 | 2027-03-02 | 5d | 5,356.9 | 5,356.9 |
| 210 | 5.7.4 | Pav. 03 | 5d | 2027-03-16 | 2027-03-22 | 199FS+2d, 209 | 2027-03-16 | 2027-03-22 | 5d | 5,356.9 | 5,356.9 |
| 211 | 5.7.5 | Pav. 04 | 5d | 2027-04-06 | 2027-04-12 | 200FS+2d, 210 | 2027-04-06 | 2027-04-12 | 5d | 5,356.9 | 5,356.9 |
| 212 | 5.7.6 | Pav. 05 | 5d | 2027-04-27 | 2027-05-03 | 201FS+2d, 211 | 2027-04-27 | 2027-05-03 | 5d | 5,356.9 | 5,356.9 |
| 213 | 5.7.7 | Pav. 06 | 5d | 2027-05-17 | 2027-05-21 | 202FS+2d, 212 | 2027-05-17 | 2027-05-21 | 5d | 5,356.9 | 5,356.9 |
| 214 | 5.7.8 | Pav. 07 | 5d | 2027-06-07 | 2027-06-11 | 203FS+2d, 213 | 2027-06-07 | 2027-06-11 | 5d | 5,356.9 | 5,356.9 |
| 215 | 5.7.9 | Pav. 08 | 5d | 2027-06-25 | 2027-07-01 | 204FS+2d, 214 | 2027-06-25 | 2027-07-01 | 5d | 5,356.9 | 5,356.9 |
| 216 | 5.7.10 | Pav. 09 | 5d | 2027-07-15 | 2027-07-21 | 205FS+2d, 215 | 2027-07-15 | 2027-07-21 | 5d | 5,356.9 | 5,356.9 |
| 217 | 5.8 | **Contrapiso** | 132d | 2027-01-22 | 2027-08-02 |  | 2027-01-22 | 2027-08-02 | 132d | 77,100.01 | 77,100.01 |
| 218 | 5.8.1 | Térreo | 6d | 2027-01-22 | 2027-01-29 | 207FS+2d | 2027-01-22 | 2027-01-29 | 6d | 7,710 | 7,710 |
| 219 | 5.8.2 | Pav. 01 | 6d | 2027-02-15 | 2027-02-22 | 208FS+2d, 218 | 2027-02-15 | 2027-02-22 | 6d | 7,710 | 7,710 |
| 220 | 5.8.3 | Pav. 02 | 6d | 2027-03-05 | 2027-03-12 | 209FS+2d, 219 | 2027-03-05 | 2027-03-12 | 6d | 7,710 | 7,710 |
| 221 | 5.8.4 | Pav. 03 | 6d | 2027-03-25 | 2027-04-02 | 210FS+2d, 220 | 2027-03-25 | 2027-04-02 | 6d | 7,710 | 7,710 |
| 222 | 5.8.5 | Pav. 04 | 6d | 2027-04-15 | 2027-04-23 | 211FS+2d, 221 | 2027-04-15 | 2027-04-23 | 6d | 7,710 | 7,710 |
| 223 | 5.8.6 | Pav. 05 | 6d | 2027-05-06 | 2027-05-13 | 212FS+2d, 222 | 2027-05-06 | 2027-05-13 | 6d | 7,710 | 7,710 |
| 224 | 5.8.7 | Pav. 06 | 6d | 2027-05-26 | 2027-06-03 | 213FS+2d, 223 | 2027-05-26 | 2027-06-03 | 6d | 7,710 | 7,710 |
| 225 | 5.8.8 | Pav. 07 | 6d | 2027-06-16 | 2027-06-23 | 214FS+2d, 224 | 2027-06-16 | 2027-06-23 | 6d | 7,710 | 7,710 |
| 226 | 5.8.9 | Pav. 08 | 6d | 2027-07-06 | 2027-07-13 | 215FS+2d, 225 | 2027-07-06 | 2027-07-13 | 6d | 7,710 | 7,710 |
| 227 | 5.8.10 | Pav. 09 | 6d | 2027-07-26 | 2027-08-02 | 216FS+2d, 226 | 2027-07-26 | 2027-08-02 | 6d | 7,710 | 7,710 |

| ID | WBS | Task | Duration | Start | Finish | Predecessors | Baseline start | Baseline finish | Baseline duration | Cost | Baseline cost |
| --- | --- | --- | --- | --- | --- | --- | --- | --- | --- | --- | --- |
| 228 | 5.9 | **Revestimento cerâmico - paredes** | 137d | 2027-02-01 | 2027-08-17 |  | 2027-02-01 | 2027-08-17 | 137d | 172,112.02 | 172,112.02 |
| 229 | 5.9.1 | Térreo | 11d | 2027-02-01 | 2027-02-17 | 218 | 2027-02-01 | 2027-02-17 | 11d | 17,211.2 | 17,211.2 |
| 230 | 5.9.2 | Pav. 01 | 11d | 2027-02-23 | 2027-03-09 | 219, 229 | 2027-02-23 | 2027-03-09 | 11d | 17,211.2 | 17,211.2 |
| 231 | 5.9.3 | Pav. 02 | 11d | 2027-03-15 | 2027-03-30 | 220, 230 | 2027-03-15 | 2027-03-30 | 11d | 17,211.2 | 17,211.2 |
| 232 | 5.9.4 | Pav. 03 | 11d | 2027-04-05 | 2027-04-19 | 221, 231 | 2027-04-05 | 2027-04-19 | 11d | 17,211.2 | 17,211.2 |
| 233 | 5.9.5 | Pav. 04 | 11d | 2027-04-26 | 2027-05-10 | 222, 232 | 2027-04-26 | 2027-05-10 | 11d | 17,211.2 | 17,211.2 |
| 234 | 5.9.6 | Pav. 05 | 11d | 2027-05-14 | 2027-05-31 | 223, 233 | 2027-05-14 | 2027-05-31 | 11d | 17,211.2 | 17,211.2 |
| 235 | 5.9.7 | Pav. 06 | 11d | 2027-06-04 | 2027-06-18 | 224, 234 | 2027-06-04 | 2027-06-18 | 11d | 17,211.2 | 17,211.2 |
| 236 | 5.9.8 | Pav. 07 | 11d | 2027-06-24 | 2027-07-08 | 225, 235 | 2027-06-24 | 2027-07-08 | 11d | 17,211.2 | 17,211.2 |
| 237 | 5.9.9 | Pav. 08 | 11d | 2027-07-14 | 2027-07-28 | 226, 236 | 2027-07-14 | 2027-07-28 | 11d | 17,211.2 | 17,211.2 |
| 238 | 5.9.10 | Pav. 09 | 11d | 2027-08-03 | 2027-08-17 | 227, 237 | 2027-08-03 | 2027-08-17 | 11d | 17,211.2 | 17,211.2 |
| 239 | 5.10 | **Revestimento cerâmico - pisos** | 133d | 2027-02-18 | 2027-08-26 |  | 2027-02-18 | 2027-08-26 | 133d | 80,375.83 | 80,375.83 |
| 240 | 5.10.1 | Térreo | 7d | 2027-02-18 | 2027-02-26 | 229 | 2027-02-18 | 2027-02-26 | 7d | 8,037.58 | 8,037.58 |
| 241 | 5.10.2 | Pav. 01 | 7d | 2027-03-10 | 2027-03-18 | 230, 240 | 2027-03-10 | 2027-03-18 | 7d | 8,037.58 | 8,037.58 |
| 242 | 5.10.3 | Pav. 02 | 7d | 2027-03-31 | 2027-04-08 | 231, 241 | 2027-03-31 | 2027-04-08 | 7d | 8,037.58 | 8,037.58 |
| 243 | 5.10.4 | Pav. 03 | 7d | 2027-04-20 | 2027-04-29 | 232, 242 | 2027-04-20 | 2027-04-29 | 7d | 8,037.58 | 8,037.58 |
| 244 | 5.10.5 | Pav. 04 | 7d | 2027-05-11 | 2027-05-19 | 233, 243 | 2027-05-11 | 2027-05-19 | 7d | 8,037.58 | 8,037.58 |
| 245 | 5.10.6 | Pav. 05 | 7d | 2027-06-01 | 2027-06-09 | 234, 244 | 2027-06-01 | 2027-06-09 | 7d | 8,037.58 | 8,037.58 |
| 246 | 5.10.7 | Pav. 06 | 7d | 2027-06-21 | 2027-06-29 | 235, 245 | 2027-06-21 | 2027-06-29 | 7d | 8,037.58 | 8,037.58 |
| 247 | 5.10.8 | Pav. 07 | 7d | 2027-07-09 | 2027-07-19 | 236, 246 | 2027-07-09 | 2027-07-19 | 7d | 8,037.58 | 8,037.58 |
| 248 | 5.10.9 | Pav. 08 | 7d | 2027-07-29 | 2027-08-06 | 237, 247 | 2027-07-29 | 2027-08-06 | 7d | 8,037.58 | 8,037.58 |
| 249 | 5.10.10 | Pav. 09 | 7d | 2027-08-18 | 2027-08-26 | 238, 248 | 2027-08-18 | 2027-08-26 | 7d | 8,037.58 | 8,037.58 |
| 250 | 5.11 | **Soleiras e peitoris internos** | 130d | 2027-03-01 | 2027-09-01 |  | 2027-03-01 | 2027-09-01 | 130d |  |  |
| 251 | 5.11.1 | Térreo | 4d | 2027-03-01 | 2027-03-04 | 240 | 2027-03-01 | 2027-03-04 | 4d |  |  |
| 252 | 5.11.2 | Pav. 01 | 4d | 2027-03-19 | 2027-03-24 | 241, 251 | 2027-03-19 | 2027-03-24 | 4d |  |  |
| 253 | 5.11.3 | Pav. 02 | 4d | 2027-04-09 | 2027-04-14 | 242, 252 | 2027-04-09 | 2027-04-14 | 4d |  |  |
| 254 | 5.11.4 | Pav. 03 | 4d | 2027-04-30 | 2027-05-05 | 243, 253 | 2027-04-30 | 2027-05-05 | 4d |  |  |
| 255 | 5.11.5 | Pav. 04 | 4d | 2027-05-20 | 2027-05-25 | 244, 254 | 2027-05-20 | 2027-05-25 | 4d |  |  |
| 256 | 5.11.6 | Pav. 05 | 4d | 2027-06-10 | 2027-06-15 | 245, 255 | 2027-06-10 | 2027-06-15 | 4d |  |  |
| 257 | 5.11.7 | Pav. 06 | 4d | 2027-06-30 | 2027-07-05 | 246, 256 | 2027-06-30 | 2027-07-05 | 4d |  |  |
| 258 | 5.11.8 | Pav. 07 | 4d | 2027-07-20 | 2027-07-23 | 247, 257 | 2027-07-20 | 2027-07-23 | 4d |  |  |
| 259 | 5.11.9 | Pav. 08 | 4d | 2027-08-09 | 2027-08-12 | 248, 258 | 2027-08-09 | 2027-08-12 | 4d |  |  |
| 260 | 5.11.10 | Pav. 09 | 4d | 2027-08-27 | 2027-09-01 | 249, 259 | 2027-08-27 | 2027-09-01 | 4d |  |  |

| ID | WBS | Task | Duration | Start | Finish | Predecessors | Baseline start | Baseline finish | Baseline duration | Cost | Baseline cost |
| --- | --- | --- | --- | --- | --- | --- | --- | --- | --- | --- | --- |
| 261 | 5.12 | **Esquadrias de alumínio com vidro** | 60d | 2027-07-23 | 2027-10-18 |  | 2027-07-23 | 2027-10-18 | 60d | 211,859.96 | 211,859.96 |
| 262 | 5.12.1 | Térreo | 6d | 2027-07-23 | 2027-07-30 | 577, 251 | 2027-07-23 | 2027-07-30 | 6d | 21,186 | 21,186 |
| 263 | 5.12.2 | Pav. 01 | 6d | 2027-08-02 | 2027-08-09 | 577, 252, 262 | 2027-08-02 | 2027-08-09 | 6d | 21,186 | 21,186 |
| 264 | 5.12.3 | Pav. 02 | 6d | 2027-08-10 | 2027-08-17 | 577, 253, 263 | 2027-08-10 | 2027-08-17 | 6d | 21,186 | 21,186 |
| 265 | 5.12.4 | Pav. 03 | 6d | 2027-08-18 | 2027-08-25 | 577, 254, 264 | 2027-08-18 | 2027-08-25 | 6d | 21,186 | 21,186 |
| 266 | 5.12.5 | Pav. 04 | 6d | 2027-08-26 | 2027-09-02 | 577, 255, 265 | 2027-08-26 | 2027-09-02 | 6d | 21,186 | 21,186 |
| 267 | 5.12.6 | Pav. 05 | 6d | 2027-09-03 | 2027-09-13 | 577, 256, 266 | 2027-09-03 | 2027-09-13 | 6d | 21,186 | 21,186 |
| 268 | 5.12.7 | Pav. 06 | 6d | 2027-09-14 | 2027-09-21 | 577, 257, 267 | 2027-09-14 | 2027-09-21 | 6d | 21,186 | 21,186 |
| 269 | 5.12.8 | Pav. 07 | 6d | 2027-09-22 | 2027-09-29 | 577, 258, 268 | 2027-09-22 | 2027-09-29 | 6d | 21,186 | 21,186 |
| 270 | 5.12.9 | Pav. 08 | 6d | 2027-09-30 | 2027-10-07 | 577, 259, 269 | 2027-09-30 | 2027-10-07 | 6d | 21,186 | 21,186 |
| 271 | 5.12.10 | Pav. 09 | 6d | 2027-10-08 | 2027-10-18 | 577, 260, 270 | 2027-10-08 | 2027-10-18 | 6d | 21,186 | 21,186 |
| 272 | 5.13 | **Gesso liso - paredes e teto** | 100d | 2027-08-02 | 2027-12-23 |  | 2027-08-02 | 2027-12-23 | 100d |  |  |
| 273 | 5.13.1 | Térreo | 10d | 2027-08-02 | 2027-08-13 | 262 | 2027-08-02 | 2027-08-13 | 10d |  |  |
| 274 | 5.13.2 | Pav. 01 | 10d | 2027-08-16 | 2027-08-27 | 263, 273 | 2027-08-16 | 2027-08-27 | 10d |  |  |
| 275 | 5.13.3 | Pav. 02 | 10d | 2027-08-30 | 2027-09-13 | 264, 274 | 2027-08-30 | 2027-09-13 | 10d |  |  |
| 276 | 5.13.4 | Pav. 03 | 10d | 2027-09-14 | 2027-09-27 | 265, 275 | 2027-09-14 | 2027-09-27 | 10d |  |  |
| 277 | 5.13.5 | Pav. 04 | 10d | 2027-09-28 | 2027-10-11 | 266, 276 | 2027-09-28 | 2027-10-11 | 10d |  |  |
| 278 | 5.13.6 | Pav. 05 | 10d | 2027-10-13 | 2027-10-26 | 267, 277 | 2027-10-13 | 2027-10-26 | 10d |  |  |
| 279 | 5.13.7 | Pav. 06 | 10d | 2027-10-27 | 2027-11-10 | 268, 278 | 2027-10-27 | 2027-11-10 | 10d |  |  |
| 280 | 5.13.8 | Pav. 07 | 10d | 2027-11-11 | 2027-11-25 | 269, 279 | 2027-11-11 | 2027-11-25 | 10d |  |  |
| 281 | 5.13.9 | Pav. 08 | 10d | 2027-11-26 | 2027-12-09 | 270, 280 | 2027-11-26 | 2027-12-09 | 10d |  |  |
| 282 | 5.13.10 | Pav. 09 | 10d | 2027-12-10 | 2027-12-23 | 271, 281 | 2027-12-10 | 2027-12-23 | 10d |  |  |
| 283 | 5.14 | **Sancas e molduras de gesso** | 95d | 2027-08-16 | 2028-01-03 |  | 2027-08-16 | 2028-01-03 | 95d | 13,749.02 | 13,749.02 |
| 284 | 5.14.1 | Térreo | 5d | 2027-08-16 | 2027-08-20 | 273 | 2027-08-16 | 2027-08-20 | 5d | 1,374.9 | 1,374.9 |
| 285 | 5.14.2 | Pav. 01 | 5d | 2027-08-30 | 2027-09-03 | 274, 284 | 2027-08-30 | 2027-09-03 | 5d | 1,374.9 | 1,374.9 |
| 286 | 5.14.3 | Pav. 02 | 5d | 2027-09-14 | 2027-09-20 | 275, 285 | 2027-09-14 | 2027-09-20 | 5d | 1,374.9 | 1,374.9 |
| 287 | 5.14.4 | Pav. 03 | 5d | 2027-09-28 | 2027-10-04 | 276, 286 | 2027-09-28 | 2027-10-04 | 5d | 1,374.9 | 1,374.9 |
| 288 | 5.14.5 | Pav. 04 | 5d | 2027-10-13 | 2027-10-19 | 277, 287 | 2027-10-13 | 2027-10-19 | 5d | 1,374.9 | 1,374.9 |
| 289 | 5.14.6 | Pav. 05 | 5d | 2027-10-27 | 2027-11-03 | 278, 288 | 2027-10-27 | 2027-11-03 | 5d | 1,374.9 | 1,374.9 |
| 290 | 5.14.7 | Pav. 06 | 5d | 2027-11-11 | 2027-11-18 | 279, 289 | 2027-11-11 | 2027-11-18 | 5d | 1,374.9 | 1,374.9 |
| 291 | 5.14.8 | Pav. 07 | 5d | 2027-11-26 | 2027-12-02 | 280, 290 | 2027-11-26 | 2027-12-02 | 5d | 1,374.9 | 1,374.9 |
| 292 | 5.14.9 | Pav. 08 | 5d | 2027-12-10 | 2027-12-16 | 281, 291 | 2027-12-10 | 2027-12-16 | 5d | 1,374.9 | 1,374.9 |
| 293 | 5.14.10 | Pav. 09 | 5d | 2027-12-27 | 2028-01-03 | 282, 292 | 2027-12-27 | 2028-01-03 | 5d | 1,374.9 | 1,374.9 |

Notes:
- 262: Depende do reboco externo e do peitoril do pavimento. A partir daqui a linha de balanço inverte e desce, acompanhando o balancim.
- 263: Depende do reboco externo e do peitoril do pavimento. A partir daqui a linha de balanço inverte e desce, acompanhando o balancim.
- 264: Depende do reboco externo e do peitoril do pavimento. A partir daqui a linha de balanço inverte e desce, acompanhando o balancim.
- 265: Depende do reboco externo e do peitoril do pavimento. A partir daqui a linha de balanço inverte e desce, acompanhando o balancim.
- 266: Depende do reboco externo e do peitoril do pavimento. A partir daqui a linha de balanço inverte e desce, acompanhando o balancim.
- 267: Depende do reboco externo e do peitoril do pavimento. A partir daqui a linha de balanço inverte e desce, acompanhando o balancim.
- 268: Depende do reboco externo e do peitoril do pavimento. A partir daqui a linha de balanço inverte e desce, acompanhando o balancim.
- 269: Depende do reboco externo e do peitoril do pavimento. A partir daqui a linha de balanço inverte e desce, acompanhando o balancim.
- 270: Depende do reboco externo e do peitoril do pavimento. A partir daqui a linha de balanço inverte e desce, acompanhando o balancim.
- 271: Depende do reboco externo e do peitoril do pavimento. A partir daqui a linha de balanço inverte e desce, acompanhando o balancim.
- 273: Gesso e higroscópico: exige envoltória estanque. Só pode ser executado após a instalação da esquadria de alumínio com vidro do pavimento. Não se aplica gesso em áreas molhadas - estas recebem emboço de argamassa (etapa 5.06).
- 274: Gesso e higroscópico: exige envoltória estanque. Só pode ser executado após a instalação da esquadria de alumínio com vidro do pavimento. Não se aplica gesso em áreas molhadas - estas recebem emboço de argamassa (etapa 5.06).
- 275: Gesso e higroscópico: exige envoltória estanque. Só pode ser executado após a instalação da esquadria de alumínio com vidro do pavimento. Não se aplica gesso em áreas molhadas - estas recebem emboço de argamassa (etapa 5.06).
- 276: Gesso e higroscópico: exige envoltória estanque. Só pode ser executado após a instalação da esquadria de alumínio com vidro do pavimento. Não se aplica gesso em áreas molhadas - estas recebem emboço de argamassa (etapa 5.06).
- 277: Gesso e higroscópico: exige envoltória estanque. Só pode ser executado após a instalação da esquadria de alumínio com vidro do pavimento. Não se aplica gesso em áreas molhadas - estas recebem emboço de argamassa (etapa 5.06).
- 278: Gesso e higroscópico: exige envoltória estanque. Só pode ser executado após a instalação da esquadria de alumínio com vidro do pavimento. Não se aplica gesso em áreas molhadas - estas recebem emboço de argamassa (etapa 5.06).
- 279: Gesso e higroscópico: exige envoltória estanque. Só pode ser executado após a instalação da esquadria de alumínio com vidro do pavimento. Não se aplica gesso em áreas molhadas - estas recebem emboço de argamassa (etapa 5.06).
- 280: Gesso e higroscópico: exige envoltória estanque. Só pode ser executado após a instalação da esquadria de alumínio com vidro do pavimento. Não se aplica gesso em áreas molhadas - estas recebem emboço de argamassa (etapa 5.06).
- 281: Gesso e higroscópico: exige envoltória estanque. Só pode ser executado após a instalação da esquadria de alumínio com vidro do pavimento. Não se aplica gesso em áreas molhadas - estas recebem emboço de argamassa (etapa 5.06).
- 282: Gesso e higroscópico: exige envoltória estanque. Só pode ser executado após a instalação da esquadria de alumínio com vidro do pavimento. Não se aplica gesso em áreas molhadas - estas recebem emboço de argamassa (etapa 5.06).

| ID | WBS | Task | Duration | Start | Finish | Predecessors | Baseline start | Baseline finish | Baseline duration | Cost | Baseline cost |
| --- | --- | --- | --- | --- | --- | --- | --- | --- | --- | --- | --- |
| 294 | 5.15 | **Enfiação eletrica e cabeamento** | 96d | 2027-08-23 | 2028-01-11 |  | 2027-08-23 | 2028-01-11 | 96d | 150,000 | 150,000 |
| 295 | 5.15.1 | Térreo | 6d | 2027-08-23 | 2027-08-30 | 284 | 2027-08-23 | 2027-08-30 | 6d | 15,000 | 15,000 |
| 296 | 5.15.2 | Pav. 01 | 6d | 2027-09-06 | 2027-09-14 | 285, 295 | 2027-09-06 | 2027-09-14 | 6d | 15,000 | 15,000 |
| 297 | 5.15.3 | Pav. 02 | 6d | 2027-09-21 | 2027-09-28 | 286, 296 | 2027-09-21 | 2027-09-28 | 6d | 15,000 | 15,000 |
| 298 | 5.15.4 | Pav. 03 | 6d | 2027-10-05 | 2027-10-13 | 287, 297 | 2027-10-05 | 2027-10-13 | 6d | 15,000 | 15,000 |
| 299 | 5.15.5 | Pav. 04 | 6d | 2027-10-20 | 2027-10-27 | 288, 298 | 2027-10-20 | 2027-10-27 | 6d | 15,000 | 15,000 |
| 300 | 5.15.6 | Pav. 05 | 6d | 2027-11-04 | 2027-11-11 | 289, 299 | 2027-11-04 | 2027-11-11 | 6d | 15,000 | 15,000 |
| 301 | 5.15.7 | Pav. 06 | 6d | 2027-11-19 | 2027-11-26 | 290, 300 | 2027-11-19 | 2027-11-26 | 6d | 15,000 | 15,000 |
| 302 | 5.15.8 | Pav. 07 | 6d | 2027-12-03 | 2027-12-10 | 291, 301 | 2027-12-03 | 2027-12-10 | 6d | 15,000 | 15,000 |
| 303 | 5.15.9 | Pav. 08 | 6d | 2027-12-17 | 2027-12-27 | 292, 302 | 2027-12-17 | 2027-12-27 | 6d | 15,000 | 15,000 |
| 304 | 5.15.10 | Pav. 09 | 6d | 2028-01-04 | 2028-01-11 | 293, 303 | 2028-01-04 | 2028-01-11 | 6d | 15,000 | 15,000 |
| 305 | 5.16 | **Selador e 1ª demão** | 97d | 2027-08-31 | 2028-01-20 |  | 2027-08-31 | 2028-01-20 | 97d | 220,000 | 220,000 |
| 306 | 5.16.1 | Térreo | 7d | 2027-08-31 | 2027-09-09 | 295 | 2027-08-31 | 2027-09-09 | 7d | 22,000 | 22,000 |
| 307 | 5.16.2 | Pav. 01 | 7d | 2027-09-15 | 2027-09-23 | 296, 306 | 2027-09-15 | 2027-09-23 | 7d | 22,000 | 22,000 |
| 308 | 5.16.3 | Pav. 02 | 7d | 2027-09-29 | 2027-10-07 | 297, 307 | 2027-09-29 | 2027-10-07 | 7d | 22,000 | 22,000 |
| 309 | 5.16.4 | Pav. 03 | 7d | 2027-10-14 | 2027-10-22 | 298, 308 | 2027-10-14 | 2027-10-22 | 7d | 22,000 | 22,000 |
| 310 | 5.16.5 | Pav. 04 | 7d | 2027-10-28 | 2027-11-08 | 299, 309 | 2027-10-28 | 2027-11-08 | 7d | 22,000 | 22,000 |
| 311 | 5.16.6 | Pav. 05 | 7d | 2027-11-12 | 2027-11-23 | 300, 310 | 2027-11-12 | 2027-11-23 | 7d | 22,000 | 22,000 |
| 312 | 5.16.7 | Pav. 06 | 7d | 2027-11-29 | 2027-12-07 | 301, 311 | 2027-11-29 | 2027-12-07 | 7d | 22,000 | 22,000 |
| 313 | 5.16.8 | Pav. 07 | 7d | 2027-12-13 | 2027-12-21 | 302, 312 | 2027-12-13 | 2027-12-21 | 7d | 22,000 | 22,000 |
| 314 | 5.16.9 | Pav. 08 | 7d | 2027-12-28 | 2028-01-06 | 303, 313 | 2027-12-28 | 2028-01-06 | 7d | 22,000 | 22,000 |
| 315 | 5.16.10 | Pav. 09 | 7d | 2028-01-12 | 2028-01-20 | 304, 314 | 2028-01-12 | 2028-01-20 | 7d | 22,000 | 22,000 |
| 316 | 5.17 | **Piso laminado e rodapé** | 96d | 2027-09-10 | 2028-01-28 |  | 2027-09-10 | 2028-01-28 | 96d | 120,501.29 | 120,501.29 |
| 317 | 5.17.1 | Térreo | 6d | 2027-09-10 | 2027-09-17 | 306 | 2027-09-10 | 2027-09-17 | 6d | 12,050.13 | 12,050.13 |
| 318 | 5.17.2 | Pav. 01 | 6d | 2027-09-24 | 2027-10-01 | 307, 317 | 2027-09-24 | 2027-10-01 | 6d | 12,050.13 | 12,050.13 |
| 319 | 5.17.3 | Pav. 02 | 6d | 2027-10-08 | 2027-10-18 | 308, 318 | 2027-10-08 | 2027-10-18 | 6d | 12,050.13 | 12,050.13 |
| 320 | 5.17.4 | Pav. 03 | 6d | 2027-10-25 | 2027-11-01 | 309, 319 | 2027-10-25 | 2027-11-01 | 6d | 12,050.13 | 12,050.13 |
| 321 | 5.17.5 | Pav. 04 | 6d | 2027-11-09 | 2027-11-17 | 310, 320 | 2027-11-09 | 2027-11-17 | 6d | 12,050.13 | 12,050.13 |
| 322 | 5.17.6 | Pav. 05 | 6d | 2027-11-24 | 2027-12-01 | 311, 321 | 2027-11-24 | 2027-12-01 | 6d | 12,050.13 | 12,050.13 |
| 323 | 5.17.7 | Pav. 06 | 6d | 2027-12-08 | 2027-12-15 | 312, 322 | 2027-12-08 | 2027-12-15 | 6d | 12,050.13 | 12,050.13 |
| 324 | 5.17.8 | Pav. 07 | 6d | 2027-12-22 | 2027-12-30 | 313, 323 | 2027-12-22 | 2027-12-30 | 6d | 12,050.13 | 12,050.13 |
| 325 | 5.17.9 | Pav. 08 | 6d | 2028-01-07 | 2028-01-14 | 314, 324 | 2028-01-07 | 2028-01-14 | 6d | 12,050.13 | 12,050.13 |
| 326 | 5.17.10 | Pav. 09 | 6d | 2028-01-21 | 2028-01-28 | 315, 325 | 2028-01-21 | 2028-01-28 | 6d | 12,050.13 | 12,050.13 |

Notes:
- 306: Sem emassamento: o gesso liso e o próprio substrato da pintura, conforme item 50 do memorial descritivo.
- 307: Sem emassamento: o gesso liso e o próprio substrato da pintura, conforme item 50 do memorial descritivo.
- 308: Sem emassamento: o gesso liso e o próprio substrato da pintura, conforme item 50 do memorial descritivo.
- 309: Sem emassamento: o gesso liso e o próprio substrato da pintura, conforme item 50 do memorial descritivo.
- 310: Sem emassamento: o gesso liso e o próprio substrato da pintura, conforme item 50 do memorial descritivo.
- 311: Sem emassamento: o gesso liso e o próprio substrato da pintura, conforme item 50 do memorial descritivo.
- 312: Sem emassamento: o gesso liso e o próprio substrato da pintura, conforme item 50 do memorial descritivo.
- 313: Sem emassamento: o gesso liso e o próprio substrato da pintura, conforme item 50 do memorial descritivo.
- 314: Sem emassamento: o gesso liso e o próprio substrato da pintura, conforme item 50 do memorial descritivo.
- 315: Sem emassamento: o gesso liso e o próprio substrato da pintura, conforme item 50 do memorial descritivo.

| ID | WBS | Task | Duration | Start | Finish | Predecessors | Baseline start | Baseline finish | Baseline duration | Cost | Baseline cost |
| --- | --- | --- | --- | --- | --- | --- | --- | --- | --- | --- | --- |
| 327 | 5.18 | **Portas de madeira e ferragens** | 96d | 2027-09-20 | 2028-02-07 |  | 2027-09-20 | 2028-02-07 | 96d | 238,572.02 | 238,572.02 |
| 328 | 5.18.1 | Térreo | 6d | 2027-09-20 | 2027-09-27 | 317 | 2027-09-20 | 2027-09-27 | 6d | 23,857.2 | 23,857.2 |
| 329 | 5.18.2 | Pav. 01 | 6d | 2027-10-04 | 2027-10-11 | 318, 328 | 2027-10-04 | 2027-10-11 | 6d | 23,857.2 | 23,857.2 |
| 330 | 5.18.3 | Pav. 02 | 6d | 2027-10-19 | 2027-10-26 | 319, 329 | 2027-10-19 | 2027-10-26 | 6d | 23,857.2 | 23,857.2 |
| 331 | 5.18.4 | Pav. 03 | 6d | 2027-11-03 | 2027-11-10 | 320, 330 | 2027-11-03 | 2027-11-10 | 6d | 23,857.2 | 23,857.2 |
| 332 | 5.18.5 | Pav. 04 | 6d | 2027-11-18 | 2027-11-25 | 321, 331 | 2027-11-18 | 2027-11-25 | 6d | 23,857.2 | 23,857.2 |
| 333 | 5.18.6 | Pav. 05 | 6d | 2027-12-02 | 2027-12-09 | 322, 332 | 2027-12-02 | 2027-12-09 | 6d | 23,857.2 | 23,857.2 |
| 334 | 5.18.7 | Pav. 06 | 6d | 2027-12-16 | 2027-12-23 | 323, 333 | 2027-12-16 | 2027-12-23 | 6d | 23,857.2 | 23,857.2 |
| 335 | 5.18.8 | Pav. 07 | 6d | 2028-01-03 | 2028-01-10 | 324, 334 | 2028-01-03 | 2028-01-10 | 6d | 23,857.2 | 23,857.2 |
| 336 | 5.18.9 | Pav. 08 | 6d | 2028-01-17 | 2028-01-24 | 325, 335 | 2028-01-17 | 2028-01-24 | 6d | 23,857.2 | 23,857.2 |
| 337 | 5.18.10 | Pav. 09 | 6d | 2028-01-31 | 2028-02-07 | 326, 336 | 2028-01-31 | 2028-02-07 | 6d | 23,857.2 | 23,857.2 |
| 338 | 5.19 | **Bancadas e molduras de granito** | 95d | 2027-09-28 | 2028-02-14 |  | 2027-09-28 | 2028-02-14 | 95d |  |  |
| 339 | 5.19.1 | Térreo | 5d | 2027-09-28 | 2027-10-04 | 328 | 2027-09-28 | 2027-10-04 | 5d |  |  |
| 340 | 5.19.2 | Pav. 01 | 5d | 2027-10-13 | 2027-10-19 | 329, 339 | 2027-10-13 | 2027-10-19 | 5d |  |  |
| 341 | 5.19.3 | Pav. 02 | 5d | 2027-10-27 | 2027-11-03 | 330, 340 | 2027-10-27 | 2027-11-03 | 5d |  |  |
| 342 | 5.19.4 | Pav. 03 | 5d | 2027-11-11 | 2027-11-18 | 331, 341 | 2027-11-11 | 2027-11-18 | 5d |  |  |
| 343 | 5.19.5 | Pav. 04 | 5d | 2027-11-26 | 2027-12-02 | 332, 342 | 2027-11-26 | 2027-12-02 | 5d |  |  |
| 344 | 5.19.6 | Pav. 05 | 5d | 2027-12-10 | 2027-12-16 | 333, 343 | 2027-12-10 | 2027-12-16 | 5d |  |  |
| 345 | 5.19.7 | Pav. 06 | 5d | 2027-12-27 | 2028-01-03 | 334, 344 | 2027-12-27 | 2028-01-03 | 5d |  |  |
| 346 | 5.19.8 | Pav. 07 | 5d | 2028-01-11 | 2028-01-17 | 335, 345 | 2028-01-11 | 2028-01-17 | 5d |  |  |
| 347 | 5.19.9 | Pav. 08 | 5d | 2028-01-25 | 2028-01-31 | 336, 346 | 2028-01-25 | 2028-01-31 | 5d |  |  |
| 348 | 5.19.10 | Pav. 09 | 5d | 2028-02-08 | 2028-02-14 | 337, 347 | 2028-02-08 | 2028-02-14 | 5d |  |  |
| 349 | 5.20 | **Louças, metais e acessórios** | 95d | 2027-10-05 | 2028-02-21 |  | 2027-10-05 | 2028-02-21 | 95d | 48,933.3 | 48,933.3 |
| 350 | 5.20.1 | Térreo | 5d | 2027-10-05 | 2027-10-11 | 339 | 2027-10-05 | 2027-10-11 | 5d | 4,893.33 | 4,893.33 |
| 351 | 5.20.2 | Pav. 01 | 5d | 2027-10-20 | 2027-10-26 | 340, 350 | 2027-10-20 | 2027-10-26 | 5d | 4,893.33 | 4,893.33 |
| 352 | 5.20.3 | Pav. 02 | 5d | 2027-11-04 | 2027-11-10 | 341, 351 | 2027-11-04 | 2027-11-10 | 5d | 4,893.33 | 4,893.33 |
| 353 | 5.20.4 | Pav. 03 | 5d | 2027-11-19 | 2027-11-25 | 342, 352 | 2027-11-19 | 2027-11-25 | 5d | 4,893.33 | 4,893.33 |
| 354 | 5.20.5 | Pav. 04 | 5d | 2027-12-03 | 2027-12-09 | 343, 353 | 2027-12-03 | 2027-12-09 | 5d | 4,893.33 | 4,893.33 |
| 355 | 5.20.6 | Pav. 05 | 5d | 2027-12-17 | 2027-12-23 | 344, 354 | 2027-12-17 | 2027-12-23 | 5d | 4,893.33 | 4,893.33 |
| 356 | 5.20.7 | Pav. 06 | 5d | 2028-01-04 | 2028-01-10 | 345, 355 | 2028-01-04 | 2028-01-10 | 5d | 4,893.33 | 4,893.33 |
| 357 | 5.20.8 | Pav. 07 | 5d | 2028-01-18 | 2028-01-24 | 346, 356 | 2028-01-18 | 2028-01-24 | 5d | 4,893.33 | 4,893.33 |
| 358 | 5.20.9 | Pav. 08 | 5d | 2028-02-01 | 2028-02-07 | 347, 357 | 2028-02-01 | 2028-02-07 | 5d | 4,893.33 | 4,893.33 |
| 359 | 5.20.10 | Pav. 09 | 5d | 2028-02-15 | 2028-02-21 | 348, 358 | 2028-02-15 | 2028-02-21 | 5d | 4,893.33 | 4,893.33 |

| ID | WBS | Task | Type | Duration | Start | Finish | Predecessors | Baseline start | Baseline finish | Baseline duration | Cost | Baseline cost |
| --- | --- | --- | --- | --- | --- | --- | --- | --- | --- | --- | --- | --- |
| 360 | 5.21 | **Acabamentos elétricos - espelhos e luminárias** |  | 95d | 2027-10-13 | 2028-03-01 |  | 2027-10-13 | 2028-03-01 | 95d | 114,375.22 | 114,375.22 |
| 361 | 5.21.1 | Térreo |  | 5d | 2027-10-13 | 2027-10-19 | 350 | 2027-10-13 | 2027-10-19 | 5d | 11,437.52 | 11,437.52 |
| 362 | 5.21.2 | Pav. 01 |  | 5d | 2027-10-27 | 2027-11-03 | 351, 361 | 2027-10-27 | 2027-11-03 | 5d | 11,437.52 | 11,437.52 |
| 363 | 5.21.3 | Pav. 02 |  | 5d | 2027-11-11 | 2027-11-18 | 352, 362 | 2027-11-11 | 2027-11-18 | 5d | 11,437.52 | 11,437.52 |
| 364 | 5.21.4 | Pav. 03 |  | 5d | 2027-11-26 | 2027-12-02 | 353, 363 | 2027-11-26 | 2027-12-02 | 5d | 11,437.52 | 11,437.52 |
| 365 | 5.21.5 | Pav. 04 |  | 5d | 2027-12-10 | 2027-12-16 | 354, 364 | 2027-12-10 | 2027-12-16 | 5d | 11,437.52 | 11,437.52 |
| 366 | 5.21.6 | Pav. 05 |  | 5d | 2027-12-27 | 2028-01-03 | 355, 365 | 2027-12-27 | 2028-01-03 | 5d | 11,437.52 | 11,437.52 |
| 367 | 5.21.7 | Pav. 06 |  | 5d | 2028-01-11 | 2028-01-17 | 356, 366 | 2028-01-11 | 2028-01-17 | 5d | 11,437.52 | 11,437.52 |
| 368 | 5.21.8 | Pav. 07 |  | 5d | 2028-01-25 | 2028-01-31 | 357, 367 | 2028-01-25 | 2028-01-31 | 5d | 11,437.52 | 11,437.52 |
| 369 | 5.21.9 | Pav. 08 |  | 5d | 2028-02-08 | 2028-02-14 | 358, 368 | 2028-02-08 | 2028-02-14 | 5d | 11,437.52 | 11,437.52 |
| 370 | 5.21.10 | Pav. 09 |  | 5d | 2028-02-22 | 2028-03-01 | 359, 369 | 2028-02-22 | 2028-03-01 | 5d | 11,437.52 | 11,437.52 |
| 371 | 5.22 | **Pintura final - 2ª demão** |  | 97d | 2027-10-20 | 2028-03-10 |  | 2027-10-20 | 2028-03-10 | 97d | 146,009.18 | 146,009.18 |
| 372 | 5.22.1 | Térreo |  | 7d | 2027-10-20 | 2027-10-28 | 361 | 2027-10-20 | 2027-10-28 | 7d | 14,600.92 | 14,600.92 |
| 373 | 5.22.2 | Pav. 01 |  | 7d | 2027-11-04 | 2027-11-12 | 362, 372 | 2027-11-04 | 2027-11-12 | 7d | 14,600.92 | 14,600.92 |
| 374 | 5.22.3 | Pav. 02 |  | 7d | 2027-11-19 | 2027-11-29 | 363, 373 | 2027-11-19 | 2027-11-29 | 7d | 14,600.92 | 14,600.92 |
| 375 | 5.22.4 | Pav. 03 |  | 7d | 2027-12-03 | 2027-12-13 | 364, 374 | 2027-12-03 | 2027-12-13 | 7d | 14,600.92 | 14,600.92 |
| 376 | 5.22.5 | Pav. 04 |  | 7d | 2027-12-17 | 2027-12-28 | 365, 375 | 2027-12-17 | 2027-12-28 | 7d | 14,600.92 | 14,600.92 |
| 377 | 5.22.6 | Pav. 05 |  | 7d | 2028-01-04 | 2028-01-12 | 366, 376 | 2028-01-04 | 2028-01-12 | 7d | 14,600.92 | 14,600.92 |
| 378 | 5.22.7 | Pav. 06 |  | 7d | 2028-01-18 | 2028-01-26 | 367, 377 | 2028-01-18 | 2028-01-26 | 7d | 14,600.92 | 14,600.92 |
| 379 | 5.22.8 | Pav. 07 |  | 7d | 2028-02-01 | 2028-02-09 | 368, 378 | 2028-02-01 | 2028-02-09 | 7d | 14,600.92 | 14,600.92 |
| 380 | 5.22.9 | Pav. 08 |  | 7d | 2028-02-15 | 2028-02-23 | 369, 379 | 2028-02-15 | 2028-02-23 | 7d | 14,600.92 | 14,600.92 |
| 381 | 5.22.10 | Pav. 09 |  | 7d | 2028-03-02 | 2028-03-10 | 370, 380 | 2028-03-02 | 2028-03-10 | 7d | 14,600.92 | 14,600.92 |
| 382 | 5.23 | **Limpeza e vistoria interna do pavimento** |  | 95d | 2027-10-29 | 2028-03-17 |  | 2027-10-29 | 2028-03-17 | 95d |  |  |
| 383 | 5.23.1 | Térreo |  | 5d | 2027-10-29 | 2027-11-05 | 372 | 2027-10-29 | 2027-11-05 | 5d |  |  |
| 384 | 5.23.2 | Pav. 01 |  | 5d | 2027-11-16 | 2027-11-22 | 373, 383 | 2027-11-16 | 2027-11-22 | 5d |  |  |
| 385 | 5.23.3 | Pav. 02 |  | 5d | 2027-11-30 | 2027-12-06 | 374, 384 | 2027-11-30 | 2027-12-06 | 5d |  |  |
| 386 | 5.23.4 | Pav. 03 |  | 5d | 2027-12-14 | 2027-12-20 | 375, 385 | 2027-12-14 | 2027-12-20 | 5d |  |  |
| 387 | 5.23.5 | Pav. 04 |  | 5d | 2027-12-29 | 2028-01-05 | 376, 386 | 2027-12-29 | 2028-01-05 | 5d |  |  |
| 388 | 5.23.6 | Pav. 05 |  | 5d | 2028-01-13 | 2028-01-19 | 377, 387 | 2028-01-13 | 2028-01-19 | 5d |  |  |
| 389 | 5.23.7 | Pav. 06 |  | 5d | 2028-01-27 | 2028-02-02 | 378, 388 | 2028-01-27 | 2028-02-02 | 5d |  |  |
| 390 | 5.23.8 | Pav. 07 |  | 5d | 2028-02-10 | 2028-02-16 | 379, 389 | 2028-02-10 | 2028-02-16 | 5d |  |  |
| 391 | 5.23.9 | Pav. 08 |  | 5d | 2028-02-24 | 2028-03-03 | 380, 390 | 2028-02-24 | 2028-03-03 | 5d |  |  |
| 392 | 5.23.10 | Pav. 09 |  | 5d | 2028-03-13 | 2028-03-17 | 381, 391 | 2028-03-13 | 2028-03-17 | 5d |  |  |
| 393 | 5.24 | MARCO: Apartamentos concluídos | milestone | 0d | 2028-03-20 | 2028-03-20 | 392 | 2028-03-20 | 2028-03-20 | 0d |  |  |

| ID | WBS | Task | Duration | Start | Finish | Predecessors | Baseline start | Baseline finish | Baseline duration |
| --- | --- | --- | --- | --- | --- | --- | --- | --- | --- |
| 394 | 6 | **HALL TÉCNICO E CIRCULAÇÃO** | 344d | 2026-11-24 | 2028-04-11 |  | 2026-11-24 | 2028-04-11 | 344d |
| 395 | 6.1 | **Prumadas hidrossanitárias - hall** | 130d | 2026-11-24 | 2027-06-04 |  | 2026-11-24 | 2027-06-04 | 130d |
| 396 | 6.1.1 | Térreo | 4d | 2026-11-24 | 2026-11-27 | 35FS+2d | 2026-11-24 | 2026-11-27 | 4d |
| 397 | 6.1.2 | Pav. 01 | 4d | 2026-12-14 | 2026-12-17 | 44FS+2d, 396 | 2026-12-14 | 2026-12-17 | 4d |
| 398 | 6.1.3 | Pav. 02 | 4d | 2027-01-07 | 2027-01-12 | 53FS+2d, 397 | 2027-01-07 | 2027-01-12 | 4d |
| 399 | 6.1.4 | Pav. 03 | 4d | 2027-01-27 | 2027-02-01 | 62FS+2d, 398 | 2027-01-27 | 2027-02-01 | 4d |
| 400 | 6.1.5 | Pav. 04 | 4d | 2027-02-18 | 2027-02-23 | 71FS+2d, 399 | 2027-02-18 | 2027-02-23 | 4d |
| 401 | 6.1.6 | Pav. 05 | 4d | 2027-03-10 | 2027-03-15 | 80FS+2d, 400 | 2027-03-10 | 2027-03-15 | 4d |
| 402 | 6.1.7 | Pav. 06 | 4d | 2027-03-31 | 2027-04-05 | 89FS+2d, 401 | 2027-03-31 | 2027-04-05 | 4d |
| 403 | 6.1.8 | Pav. 07 | 4d | 2027-04-20 | 2027-04-26 | 98FS+2d, 402 | 2027-04-20 | 2027-04-26 | 4d |
| 404 | 6.1.9 | Pav. 08 | 4d | 2027-05-11 | 2027-05-14 | 107FS+2d, 403 | 2027-05-11 | 2027-05-14 | 4d |
| 405 | 6.1.10 | Pav. 09 | 4d | 2027-06-01 | 2027-06-04 | 116FS+2d, 404 | 2027-06-01 | 2027-06-04 | 4d |
| 406 | 6.2 | **Prumadas elétricas e de sistemas - hall** | 130d | 2026-11-30 | 2027-06-10 |  | 2026-11-30 | 2027-06-10 | 130d |
| 407 | 6.2.1 | Térreo | 4d | 2026-11-30 | 2026-12-03 | 396 | 2026-11-30 | 2026-12-03 | 4d |
| 408 | 6.2.2 | Pav. 01 | 4d | 2026-12-18 | 2026-12-23 | 397, 407 | 2026-12-18 | 2026-12-23 | 4d |
| 409 | 6.2.3 | Pav. 02 | 4d | 2027-01-13 | 2027-01-18 | 398, 408 | 2027-01-13 | 2027-01-18 | 4d |
| 410 | 6.2.4 | Pav. 03 | 4d | 2027-02-02 | 2027-02-05 | 399, 409 | 2027-02-02 | 2027-02-05 | 4d |
| 411 | 6.2.5 | Pav. 04 | 4d | 2027-02-24 | 2027-03-01 | 400, 410 | 2027-02-24 | 2027-03-01 | 4d |
| 412 | 6.2.6 | Pav. 05 | 4d | 2027-03-16 | 2027-03-19 | 401, 411 | 2027-03-16 | 2027-03-19 | 4d |
| 413 | 6.2.7 | Pav. 06 | 4d | 2027-04-06 | 2027-04-09 | 402, 412 | 2027-04-06 | 2027-04-09 | 4d |
| 414 | 6.2.8 | Pav. 07 | 4d | 2027-04-27 | 2027-04-30 | 403, 413 | 2027-04-27 | 2027-04-30 | 4d |
| 415 | 6.2.9 | Pav. 08 | 4d | 2027-05-17 | 2027-05-20 | 404, 414 | 2027-05-17 | 2027-05-20 | 4d |
| 416 | 6.2.10 | Pav. 09 | 4d | 2027-06-07 | 2027-06-10 | 405, 415 | 2027-06-07 | 2027-06-10 | 4d |
| 417 | 6.3 | **Prumada de gás GLP - hall** | 129d | 2026-12-04 | 2027-06-15 |  | 2026-12-04 | 2027-06-15 | 129d |
| 418 | 6.3.1 | Térreo | 3d | 2026-12-04 | 2026-12-08 | 407 | 2026-12-04 | 2026-12-08 | 3d |
| 419 | 6.3.2 | Pav. 01 | 3d | 2026-12-28 | 2026-12-30 | 408, 418 | 2026-12-28 | 2026-12-30 | 3d |
| 420 | 6.3.3 | Pav. 02 | 3d | 2027-01-19 | 2027-01-21 | 409, 419 | 2027-01-19 | 2027-01-21 | 3d |
| 421 | 6.3.4 | Pav. 03 | 3d | 2027-02-10 | 2027-02-12 | 410, 420 | 2027-02-10 | 2027-02-12 | 3d |
| 422 | 6.3.5 | Pav. 04 | 3d | 2027-03-02 | 2027-03-04 | 411, 421 | 2027-03-02 | 2027-03-04 | 3d |
| 423 | 6.3.6 | Pav. 05 | 3d | 2027-03-22 | 2027-03-24 | 412, 422 | 2027-03-22 | 2027-03-24 | 3d |
| 424 | 6.3.7 | Pav. 06 | 3d | 2027-04-12 | 2027-04-14 | 413, 423 | 2027-04-12 | 2027-04-14 | 3d |
| 425 | 6.3.8 | Pav. 07 | 3d | 2027-05-03 | 2027-05-05 | 414, 424 | 2027-05-03 | 2027-05-05 | 3d |
| 426 | 6.3.9 | Pav. 08 | 3d | 2027-05-21 | 2027-05-25 | 415, 425 | 2027-05-21 | 2027-05-25 | 3d |
| 427 | 6.3.10 | Pav. 09 | 3d | 2027-06-11 | 2027-06-15 | 416, 426 | 2027-06-11 | 2027-06-15 | 3d |

| ID | WBS | Task | Duration | Start | Finish | Predecessors | Baseline start | Baseline finish | Baseline duration |
| --- | --- | --- | --- | --- | --- | --- | --- | --- | --- |
| 428 | 6.4 | **Rede de hidrantes - prumada e ramais** | 130d | 2026-12-09 | 2027-06-21 |  | 2026-12-09 | 2027-06-21 | 130d |
| 429 | 6.4.1 | Térreo | 4d | 2026-12-09 | 2026-12-14 | 418 | 2026-12-09 | 2026-12-14 | 4d |
| 430 | 6.4.2 | Pav. 01 | 4d | 2027-01-04 | 2027-01-07 | 419, 429 | 2027-01-04 | 2027-01-07 | 4d |
| 431 | 6.4.3 | Pav. 02 | 4d | 2027-01-22 | 2027-01-27 | 420, 430 | 2027-01-22 | 2027-01-27 | 4d |
| 432 | 6.4.4 | Pav. 03 | 4d | 2027-02-15 | 2027-02-18 | 421, 431 | 2027-02-15 | 2027-02-18 | 4d |
| 433 | 6.4.5 | Pav. 04 | 4d | 2027-03-05 | 2027-03-10 | 422, 432 | 2027-03-05 | 2027-03-10 | 4d |
| 434 | 6.4.6 | Pav. 05 | 4d | 2027-03-25 | 2027-03-31 | 423, 433 | 2027-03-25 | 2027-03-31 | 4d |
| 435 | 6.4.7 | Pav. 06 | 4d | 2027-04-15 | 2027-04-20 | 424, 434 | 2027-04-15 | 2027-04-20 | 4d |
| 436 | 6.4.8 | Pav. 07 | 4d | 2027-05-06 | 2027-05-11 | 425, 435 | 2027-05-06 | 2027-05-11 | 4d |
| 437 | 6.4.9 | Pav. 08 | 4d | 2027-05-26 | 2027-06-01 | 426, 436 | 2027-05-26 | 2027-06-01 | 4d |
| 438 | 6.4.10 | Pav. 09 | 4d | 2027-06-16 | 2027-06-21 | 427, 437 | 2027-06-16 | 2027-06-21 | 4d |
| 439 | 6.5 | **Fechamento de shaft** | 129d | 2026-12-15 | 2027-06-24 |  | 2026-12-15 | 2027-06-24 | 129d |
| 440 | 6.5.1 | Térreo | 3d | 2026-12-15 | 2026-12-17 | 429 | 2026-12-15 | 2026-12-17 | 3d |
| 441 | 6.5.2 | Pav. 01 | 3d | 2027-01-08 | 2027-01-12 | 430, 440 | 2027-01-08 | 2027-01-12 | 3d |
| 442 | 6.5.3 | Pav. 02 | 3d | 2027-01-28 | 2027-02-01 | 431, 441 | 2027-01-28 | 2027-02-01 | 3d |
| 443 | 6.5.4 | Pav. 03 | 3d | 2027-02-19 | 2027-02-23 | 432, 442 | 2027-02-19 | 2027-02-23 | 3d |
| 444 | 6.5.5 | Pav. 04 | 3d | 2027-03-11 | 2027-03-15 | 433, 443 | 2027-03-11 | 2027-03-15 | 3d |
| 445 | 6.5.6 | Pav. 05 | 3d | 2027-04-01 | 2027-04-05 | 434, 444 | 2027-04-01 | 2027-04-05 | 3d |
| 446 | 6.5.7 | Pav. 06 | 3d | 2027-04-22 | 2027-04-26 | 435, 445 | 2027-04-22 | 2027-04-26 | 3d |
| 447 | 6.5.8 | Pav. 07 | 3d | 2027-05-12 | 2027-05-14 | 436, 446 | 2027-05-12 | 2027-05-14 | 3d |
| 448 | 6.5.9 | Pav. 08 | 3d | 2027-06-02 | 2027-06-04 | 437, 447 | 2027-06-02 | 2027-06-04 | 3d |
| 449 | 6.5.10 | Pav. 09 | 3d | 2027-06-22 | 2027-06-24 | 438, 448 | 2027-06-22 | 2027-06-24 | 3d |
| 450 | 6.6 | **Reboco, emassamento e 1a demao - hall** | 97d | 2027-10-29 | 2028-03-21 |  | 2027-10-29 | 2028-03-21 | 97d |
| 451 | 6.6.1 | Térreo | 7d | 2027-10-29 | 2027-11-09 | 372 | 2027-10-29 | 2027-11-09 | 7d |
| 452 | 6.6.2 | Pav. 01 | 7d | 2027-11-16 | 2027-11-24 | 373, 451 | 2027-11-16 | 2027-11-24 | 7d |
| 453 | 6.6.3 | Pav. 02 | 7d | 2027-11-30 | 2027-12-08 | 374, 452 | 2027-11-30 | 2027-12-08 | 7d |
| 454 | 6.6.4 | Pav. 03 | 7d | 2027-12-14 | 2027-12-22 | 375, 453 | 2027-12-14 | 2027-12-22 | 7d |
| 455 | 6.6.5 | Pav. 04 | 7d | 2027-12-29 | 2028-01-07 | 376, 454 | 2027-12-29 | 2028-01-07 | 7d |
| 456 | 6.6.6 | Pav. 05 | 7d | 2028-01-13 | 2028-01-21 | 377, 455 | 2028-01-13 | 2028-01-21 | 7d |
| 457 | 6.6.7 | Pav. 06 | 7d | 2028-01-27 | 2028-02-04 | 378, 456 | 2028-01-27 | 2028-02-04 | 7d |
| 458 | 6.6.8 | Pav. 07 | 7d | 2028-02-10 | 2028-02-18 | 379, 457 | 2028-02-10 | 2028-02-18 | 7d |
| 459 | 6.6.9 | Pav. 08 | 7d | 2028-02-24 | 2028-03-07 | 380, 458 | 2028-02-24 | 2028-03-07 | 7d |
| 460 | 6.6.10 | Pav. 09 | 7d | 2028-03-13 | 2028-03-21 | 381, 459 | 2028-03-13 | 2028-03-21 | 7d |

| ID | WBS | Task | Duration | Start | Finish | Predecessors | Baseline start | Baseline finish | Baseline duration |
| --- | --- | --- | --- | --- | --- | --- | --- | --- | --- |
| 461 | 6.7 | **Forro de gesso - hall** | 94d | 2027-11-10 | 2028-03-27 |  | 2027-11-10 | 2028-03-27 | 94d |
| 462 | 6.7.1 | Térreo | 4d | 2027-11-10 | 2027-11-16 | 451 | 2027-11-10 | 2027-11-16 | 4d |
| 463 | 6.7.2 | Pav. 01 | 4d | 2027-11-25 | 2027-11-30 | 452, 462 | 2027-11-25 | 2027-11-30 | 4d |
| 464 | 6.7.3 | Pav. 02 | 4d | 2027-12-09 | 2027-12-14 | 453, 463 | 2027-12-09 | 2027-12-14 | 4d |
| 465 | 6.7.4 | Pav. 03 | 4d | 2027-12-23 | 2027-12-29 | 454, 464 | 2027-12-23 | 2027-12-29 | 4d |
| 466 | 6.7.5 | Pav. 04 | 4d | 2028-01-10 | 2028-01-13 | 455, 465 | 2028-01-10 | 2028-01-13 | 4d |
| 467 | 6.7.6 | Pav. 05 | 4d | 2028-01-24 | 2028-01-27 | 456, 466 | 2028-01-24 | 2028-01-27 | 4d |
| 468 | 6.7.7 | Pav. 06 | 4d | 2028-02-07 | 2028-02-10 | 457, 467 | 2028-02-07 | 2028-02-10 | 4d |
| 469 | 6.7.8 | Pav. 07 | 4d | 2028-02-21 | 2028-02-24 | 458, 468 | 2028-02-21 | 2028-02-24 | 4d |
| 470 | 6.7.9 | Pav. 08 | 4d | 2028-03-08 | 2028-03-13 | 459, 469 | 2028-03-08 | 2028-03-13 | 4d |
| 471 | 6.7.10 | Pav. 09 | 4d | 2028-03-22 | 2028-03-27 | 460, 470 | 2028-03-22 | 2028-03-27 | 4d |
| 472 | 6.8 | **Revestimento cerâmico de piso - hall** | 94d | 2027-11-17 | 2028-03-31 |  | 2027-11-17 | 2028-03-31 | 94d |
| 473 | 6.8.1 | Térreo | 4d | 2027-11-17 | 2027-11-22 | 462 | 2027-11-17 | 2027-11-22 | 4d |
| 474 | 6.8.2 | Pav. 01 | 4d | 2027-12-01 | 2027-12-06 | 463, 473 | 2027-12-01 | 2027-12-06 | 4d |
| 475 | 6.8.3 | Pav. 02 | 4d | 2027-12-15 | 2027-12-20 | 464, 474 | 2027-12-15 | 2027-12-20 | 4d |
| 476 | 6.8.4 | Pav. 03 | 4d | 2027-12-30 | 2028-01-05 | 465, 475 | 2027-12-30 | 2028-01-05 | 4d |
| 477 | 6.8.5 | Pav. 04 | 4d | 2028-01-14 | 2028-01-19 | 466, 476 | 2028-01-14 | 2028-01-19 | 4d |
| 478 | 6.8.6 | Pav. 05 | 4d | 2028-01-28 | 2028-02-02 | 467, 477 | 2028-01-28 | 2028-02-02 | 4d |
| 479 | 6.8.7 | Pav. 06 | 4d | 2028-02-11 | 2028-02-16 | 468, 478 | 2028-02-11 | 2028-02-16 | 4d |
| 480 | 6.8.8 | Pav. 07 | 4d | 2028-02-25 | 2028-03-03 | 469, 479 | 2028-02-25 | 2028-03-03 | 4d |
| 481 | 6.8.9 | Pav. 08 | 4d | 2028-03-14 | 2028-03-17 | 470, 480 | 2028-03-14 | 2028-03-17 | 4d |
| 482 | 6.8.10 | Pav. 09 | 4d | 2028-03-28 | 2028-03-31 | 471, 481 | 2028-03-28 | 2028-03-31 | 4d |
| 483 | 6.9 | **Moldura de granito da porta do elevador** | 93d | 2027-11-23 | 2028-04-05 |  | 2027-11-23 | 2028-04-05 | 93d |
| 484 | 6.9.1 | Térreo | 3d | 2027-11-23 | 2027-11-25 | 473 | 2027-11-23 | 2027-11-25 | 3d |
| 485 | 6.9.2 | Pav. 01 | 3d | 2027-12-07 | 2027-12-09 | 474, 484 | 2027-12-07 | 2027-12-09 | 3d |
| 486 | 6.9.3 | Pav. 02 | 3d | 2027-12-21 | 2027-12-23 | 475, 485 | 2027-12-21 | 2027-12-23 | 3d |
| 487 | 6.9.4 | Pav. 03 | 3d | 2028-01-06 | 2028-01-10 | 476, 486 | 2028-01-06 | 2028-01-10 | 3d |
| 488 | 6.9.5 | Pav. 04 | 3d | 2028-01-20 | 2028-01-24 | 477, 487 | 2028-01-20 | 2028-01-24 | 3d |
| 489 | 6.9.6 | Pav. 05 | 3d | 2028-02-03 | 2028-02-07 | 478, 488 | 2028-02-03 | 2028-02-07 | 3d |
| 490 | 6.9.7 | Pav. 06 | 3d | 2028-02-17 | 2028-02-21 | 479, 489 | 2028-02-17 | 2028-02-21 | 3d |
| 491 | 6.9.8 | Pav. 07 | 3d | 2028-03-06 | 2028-03-08 | 480, 490 | 2028-03-06 | 2028-03-08 | 3d |
| 492 | 6.9.9 | Pav. 08 | 3d | 2028-03-20 | 2028-03-22 | 481, 491 | 2028-03-20 | 2028-03-22 | 3d |
| 493 | 6.9.10 | Pav. 09 | 3d | 2028-04-03 | 2028-04-05 | 482, 492 | 2028-04-03 | 2028-04-05 | 3d |

| ID | WBS | Task | Duration | Start | Finish | Predecessors | Baseline start | Baseline finish | Baseline duration | Cost | Baseline cost |
| --- | --- | --- | --- | --- | --- | --- | --- | --- | --- | --- | --- |
| 494 | 6.10 | **Pintura final e luminárias - hall** | 94d | 2027-11-26 | 2028-04-11 |  | 2027-11-26 | 2028-04-11 | 94d |  |  |
| 495 | 6.10.1 | Térreo | 4d | 2027-11-26 | 2027-12-01 | 484 | 2027-11-26 | 2027-12-01 | 4d |  |  |
| 496 | 6.10.2 | Pav. 01 | 4d | 2027-12-10 | 2027-12-15 | 485, 495 | 2027-12-10 | 2027-12-15 | 4d |  |  |
| 497 | 6.10.3 | Pav. 02 | 4d | 2027-12-27 | 2027-12-30 | 486, 496 | 2027-12-27 | 2027-12-30 | 4d |  |  |
| 498 | 6.10.4 | Pav. 03 | 4d | 2028-01-11 | 2028-01-14 | 487, 497 | 2028-01-11 | 2028-01-14 | 4d |  |  |
| 499 | 6.10.5 | Pav. 04 | 4d | 2028-01-25 | 2028-01-28 | 488, 498 | 2028-01-25 | 2028-01-28 | 4d |  |  |
| 500 | 6.10.6 | Pav. 05 | 4d | 2028-02-08 | 2028-02-11 | 489, 499 | 2028-02-08 | 2028-02-11 | 4d |  |  |
| 501 | 6.10.7 | Pav. 06 | 4d | 2028-02-22 | 2028-02-25 | 490, 500 | 2028-02-22 | 2028-02-25 | 4d |  |  |
| 502 | 6.10.8 | Pav. 07 | 4d | 2028-03-09 | 2028-03-14 | 491, 501 | 2028-03-09 | 2028-03-14 | 4d |  |  |
| 503 | 6.10.9 | Pav. 08 | 4d | 2028-03-23 | 2028-03-28 | 492, 502 | 2028-03-23 | 2028-03-28 | 4d |  |  |
| 504 | 6.10.10 | Pav. 09 | 4d | 2028-04-06 | 2028-04-11 | 493, 503 | 2028-04-06 | 2028-04-11 | 4d |  |  |
| 505 | 7 | **CAIXA DE ESCADA** | 283d | 2027-02-12 | 2028-03-29 |  | 2027-02-12 | 2028-03-29 | 283d | 104,643 | 104,643 |
| 506 | 7.1 | **Regularização de piso e degraus de escada** | 30d | 2027-02-12 | 2027-03-25 |  | 2027-02-12 | 2027-03-25 | 30d | 20,928.6 | 20,928.6 |
| 507 | 7.1.1 | Térreo | 3d | 2027-02-12 | 2027-02-16 | 137 | 2027-02-12 | 2027-02-16 | 3d | 2,092.86 | 2,092.86 |
| 508 | 7.1.2 | Pav. 01 | 3d | 2027-02-17 | 2027-02-19 | 137, 507 | 2027-02-17 | 2027-02-19 | 3d | 2,092.86 | 2,092.86 |
| 509 | 7.1.3 | Pav. 02 | 3d | 2027-02-22 | 2027-02-24 | 137, 508 | 2027-02-22 | 2027-02-24 | 3d | 2,092.86 | 2,092.86 |
| 510 | 7.1.4 | Pav. 03 | 3d | 2027-02-25 | 2027-03-01 | 137, 509 | 2027-02-25 | 2027-03-01 | 3d | 2,092.86 | 2,092.86 |
| 511 | 7.1.5 | Pav. 04 | 3d | 2027-03-02 | 2027-03-04 | 137, 510 | 2027-03-02 | 2027-03-04 | 3d | 2,092.86 | 2,092.86 |
| 512 | 7.1.6 | Pav. 05 | 3d | 2027-03-05 | 2027-03-09 | 137, 511 | 2027-03-05 | 2027-03-09 | 3d | 2,092.86 | 2,092.86 |
| 513 | 7.1.7 | Pav. 06 | 3d | 2027-03-10 | 2027-03-12 | 137, 512 | 2027-03-10 | 2027-03-12 | 3d | 2,092.86 | 2,092.86 |
| 514 | 7.1.8 | Pav. 07 | 3d | 2027-03-15 | 2027-03-17 | 137, 513 | 2027-03-15 | 2027-03-17 | 3d | 2,092.86 | 2,092.86 |
| 515 | 7.1.9 | Pav. 08 | 3d | 2027-03-18 | 2027-03-22 | 137, 514 | 2027-03-18 | 2027-03-22 | 3d | 2,092.86 | 2,092.86 |
| 516 | 7.1.10 | Pav. 09 | 3d | 2027-03-23 | 2027-03-25 | 137, 515 | 2027-03-23 | 2027-03-25 | 3d | 2,092.86 | 2,092.86 |
| 517 | 7.2 | **Emassamento e 1ª demão - escada** | 94d | 2027-10-29 | 2028-03-16 |  | 2027-10-29 | 2028-03-16 | 94d | 20,928.6 | 20,928.6 |
| 518 | 7.2.1 | Térreo | 4d | 2027-10-29 | 2027-11-04 | 372 | 2027-10-29 | 2027-11-04 | 4d | 2,092.86 | 2,092.86 |
| 519 | 7.2.2 | Pav. 01 | 4d | 2027-11-16 | 2027-11-19 | 373, 518 | 2027-11-16 | 2027-11-19 | 4d | 2,092.86 | 2,092.86 |
| 520 | 7.2.3 | Pav. 02 | 4d | 2027-11-30 | 2027-12-03 | 374, 519 | 2027-11-30 | 2027-12-03 | 4d | 2,092.86 | 2,092.86 |
| 521 | 7.2.4 | Pav. 03 | 4d | 2027-12-14 | 2027-12-17 | 375, 520 | 2027-12-14 | 2027-12-17 | 4d | 2,092.86 | 2,092.86 |
| 522 | 7.2.5 | Pav. 04 | 4d | 2027-12-29 | 2028-01-04 | 376, 521 | 2027-12-29 | 2028-01-04 | 4d | 2,092.86 | 2,092.86 |
| 523 | 7.2.6 | Pav. 05 | 4d | 2028-01-13 | 2028-01-18 | 377, 522 | 2028-01-13 | 2028-01-18 | 4d | 2,092.86 | 2,092.86 |
| 524 | 7.2.7 | Pav. 06 | 4d | 2028-01-27 | 2028-02-01 | 378, 523 | 2028-01-27 | 2028-02-01 | 4d | 2,092.86 | 2,092.86 |
| 525 | 7.2.8 | Pav. 07 | 4d | 2028-02-10 | 2028-02-15 | 379, 524 | 2028-02-10 | 2028-02-15 | 4d | 2,092.86 | 2,092.86 |
| 526 | 7.2.9 | Pav. 08 | 4d | 2028-02-24 | 2028-03-02 | 380, 525 | 2028-02-24 | 2028-03-02 | 4d | 2,092.86 | 2,092.86 |
| 527 | 7.2.10 | Pav. 09 | 4d | 2028-03-13 | 2028-03-16 | 381, 526 | 2028-03-13 | 2028-03-16 | 4d | 2,092.86 | 2,092.86 |

| ID | WBS | Task | Duration | Start | Finish | Predecessors | Baseline start | Baseline finish | Baseline duration | Cost | Baseline cost |
| --- | --- | --- | --- | --- | --- | --- | --- | --- | --- | --- | --- |
| 528 | 7.3 | **Corrimãos e guarda-corpos** | 93d | 2027-11-05 | 2028-03-21 |  | 2027-11-05 | 2028-03-21 | 93d | 20,928.6 | 20,928.6 |
| 529 | 7.3.1 | Térreo | 3d | 2027-11-05 | 2027-11-09 | 518 | 2027-11-05 | 2027-11-09 | 3d | 2,092.86 | 2,092.86 |
| 530 | 7.3.2 | Pav. 01 | 3d | 2027-11-22 | 2027-11-24 | 519, 529 | 2027-11-22 | 2027-11-24 | 3d | 2,092.86 | 2,092.86 |
| 531 | 7.3.3 | Pav. 02 | 3d | 2027-12-06 | 2027-12-08 | 520, 530 | 2027-12-06 | 2027-12-08 | 3d | 2,092.86 | 2,092.86 |
| 532 | 7.3.4 | Pav. 03 | 3d | 2027-12-20 | 2027-12-22 | 521, 531 | 2027-12-20 | 2027-12-22 | 3d | 2,092.86 | 2,092.86 |
| 533 | 7.3.5 | Pav. 04 | 3d | 2028-01-05 | 2028-01-07 | 522, 532 | 2028-01-05 | 2028-01-07 | 3d | 2,092.86 | 2,092.86 |
| 534 | 7.3.6 | Pav. 05 | 3d | 2028-01-19 | 2028-01-21 | 523, 533 | 2028-01-19 | 2028-01-21 | 3d | 2,092.86 | 2,092.86 |
| 535 | 7.3.7 | Pav. 06 | 3d | 2028-02-02 | 2028-02-04 | 524, 534 | 2028-02-02 | 2028-02-04 | 3d | 2,092.86 | 2,092.86 |
| 536 | 7.3.8 | Pav. 07 | 3d | 2028-02-16 | 2028-02-18 | 525, 535 | 2028-02-16 | 2028-02-18 | 3d | 2,092.86 | 2,092.86 |
| 537 | 7.3.9 | Pav. 08 | 3d | 2028-03-03 | 2028-03-07 | 526, 536 | 2028-03-03 | 2028-03-07 | 3d | 2,092.86 | 2,092.86 |
| 538 | 7.3.10 | Pav. 09 | 3d | 2028-03-17 | 2028-03-21 | 527, 537 | 2028-03-17 | 2028-03-21 | 3d | 2,092.86 | 2,092.86 |
| 539 | 7.4 | **Porta corta-fogo** | 93d | 2027-11-10 | 2028-03-24 |  | 2027-11-10 | 2028-03-24 | 93d | 20,928.6 | 20,928.6 |
| 540 | 7.4.1 | Térreo | 3d | 2027-11-10 | 2027-11-12 | 529 | 2027-11-10 | 2027-11-12 | 3d | 2,092.86 | 2,092.86 |
| 541 | 7.4.2 | Pav. 01 | 3d | 2027-11-25 | 2027-11-29 | 530, 540 | 2027-11-25 | 2027-11-29 | 3d | 2,092.86 | 2,092.86 |
| 542 | 7.4.3 | Pav. 02 | 3d | 2027-12-09 | 2027-12-13 | 531, 541 | 2027-12-09 | 2027-12-13 | 3d | 2,092.86 | 2,092.86 |
| 543 | 7.4.4 | Pav. 03 | 3d | 2027-12-23 | 2027-12-28 | 532, 542 | 2027-12-23 | 2027-12-28 | 3d | 2,092.86 | 2,092.86 |
| 544 | 7.4.5 | Pav. 04 | 3d | 2028-01-10 | 2028-01-12 | 533, 543 | 2028-01-10 | 2028-01-12 | 3d | 2,092.86 | 2,092.86 |
| 545 | 7.4.6 | Pav. 05 | 3d | 2028-01-24 | 2028-01-26 | 534, 544 | 2028-01-24 | 2028-01-26 | 3d | 2,092.86 | 2,092.86 |
| 546 | 7.4.7 | Pav. 06 | 3d | 2028-02-07 | 2028-02-09 | 535, 545 | 2028-02-07 | 2028-02-09 | 3d | 2,092.86 | 2,092.86 |
| 547 | 7.4.8 | Pav. 07 | 3d | 2028-02-21 | 2028-02-23 | 536, 546 | 2028-02-21 | 2028-02-23 | 3d | 2,092.86 | 2,092.86 |
| 548 | 7.4.9 | Pav. 08 | 3d | 2028-03-08 | 2028-03-10 | 537, 547 | 2028-03-08 | 2028-03-10 | 3d | 2,092.86 | 2,092.86 |
| 549 | 7.4.10 | Pav. 09 | 3d | 2028-03-22 | 2028-03-24 | 538, 548 | 2028-03-22 | 2028-03-24 | 3d | 2,092.86 | 2,092.86 |
| 550 | 7.5 | **Pintura final e sinalização - escada** | 93d | 2027-11-16 | 2028-03-29 |  | 2027-11-16 | 2028-03-29 | 93d | 20,928.6 | 20,928.6 |
| 551 | 7.5.1 | Térreo | 3d | 2027-11-16 | 2027-11-18 | 540 | 2027-11-16 | 2027-11-18 | 3d | 2,092.86 | 2,092.86 |
| 552 | 7.5.2 | Pav. 01 | 3d | 2027-11-30 | 2027-12-02 | 541, 551 | 2027-11-30 | 2027-12-02 | 3d | 2,092.86 | 2,092.86 |
| 553 | 7.5.3 | Pav. 02 | 3d | 2027-12-14 | 2027-12-16 | 542, 552 | 2027-12-14 | 2027-12-16 | 3d | 2,092.86 | 2,092.86 |
| 554 | 7.5.4 | Pav. 03 | 3d | 2027-12-29 | 2028-01-03 | 543, 553 | 2027-12-29 | 2028-01-03 | 3d | 2,092.86 | 2,092.86 |
| 555 | 7.5.5 | Pav. 04 | 3d | 2028-01-13 | 2028-01-17 | 544, 554 | 2028-01-13 | 2028-01-17 | 3d | 2,092.86 | 2,092.86 |
| 556 | 7.5.6 | Pav. 05 | 3d | 2028-01-27 | 2028-01-31 | 545, 555 | 2028-01-27 | 2028-01-31 | 3d | 2,092.86 | 2,092.86 |
| 557 | 7.5.7 | Pav. 06 | 3d | 2028-02-10 | 2028-02-14 | 546, 556 | 2028-02-10 | 2028-02-14 | 3d | 2,092.86 | 2,092.86 |
| 558 | 7.5.8 | Pav. 07 | 3d | 2028-02-24 | 2028-03-01 | 547, 557 | 2028-02-24 | 2028-03-01 | 3d | 2,092.86 | 2,092.86 |
| 559 | 7.5.9 | Pav. 08 | 3d | 2028-03-13 | 2028-03-15 | 548, 558 | 2028-03-13 | 2028-03-15 | 3d | 2,092.86 | 2,092.86 |
| 560 | 7.5.10 | Pav. 09 | 3d | 2028-03-27 | 2028-03-29 | 549, 559 | 2028-03-27 | 2028-03-29 | 3d | 2,092.86 | 2,092.86 |

| ID | WBS | Task | Type | Duration | Start | Finish | Predecessors | Baseline start | Baseline finish | Baseline duration | Cost | Baseline cost |
| --- | --- | --- | --- | --- | --- | --- | --- | --- | --- | --- | --- | --- |
| 561 | 8 | **FACHADAS** |  | 126d | 2027-05-10 | 2027-11-05 |  | 2027-05-10 | 2027-11-05 | 126d | 273,968.59 | 273,968.59 |
| 562 | 8.1 | **Reboco externo (chapisco + emboço)** |  | 44d | 2027-05-10 | 2027-07-09 |  | 2027-05-10 | 2027-07-09 | 44d | 149,133.21 | 149,133.21 |
| 563 | 8.1.1 | Fachada 01 - Frontal |  | 22d | 2027-05-10 | 2027-06-09 | 117FS+5d | 2027-05-10 | 2027-06-09 | 22d | 37,283.3 | 37,283.3 |
| 564 | 8.1.2 | Fachada 02 - Lateral Direita |  | 22d | 2027-05-10 | 2027-06-09 | 117FS+5d | 2027-05-10 | 2027-06-09 | 22d | 37,283.3 | 37,283.3 |
| 565 | 8.1.3 | Fachada 03 - Fundos |  | 22d | 2027-06-10 | 2027-07-09 | 563 | 2027-06-10 | 2027-07-09 | 22d | 37,283.3 | 37,283.3 |
| 566 | 8.1.4 | Fachada 04 - Lateral Esquerda |  | 22d | 2027-06-10 | 2027-07-09 | 564 | 2027-06-10 | 2027-07-09 | 22d | 37,283.3 | 37,283.3 |
| 567 | 8.2 | **Peitoris e arremates externos** |  | 30d | 2027-06-10 | 2027-07-21 |  | 2027-06-10 | 2027-07-21 | 30d |  |  |
| 568 | 8.2.1 | Fachada 01 - Frontal |  | 8d | 2027-06-10 | 2027-06-21 | 563 | 2027-06-10 | 2027-06-21 | 8d |  |  |
| 569 | 8.2.2 | Fachada 02 - Lateral Direita |  | 8d | 2027-06-10 | 2027-06-21 | 564 | 2027-06-10 | 2027-06-21 | 8d |  |  |
| 570 | 8.2.3 | Fachada 03 - Fundos |  | 8d | 2027-07-12 | 2027-07-21 | 565 | 2027-07-12 | 2027-07-21 | 8d |  |  |
| 571 | 8.2.4 | Fachada 04 - Lateral Esquerda |  | 8d | 2027-07-12 | 2027-07-21 | 566 | 2027-07-12 | 2027-07-21 | 8d |  |  |
| 572 | 8.3 | **Pintura externa - textura lisa** |  | 12d | 2027-10-19 | 2027-11-04 |  | 2027-10-19 | 2027-11-04 | 12d | 124,835.38 | 124,835.38 |
| 573 | 8.3.1 | Fachada 01 - Frontal |  | 12d | 2027-10-19 | 2027-11-04 | 568, 271 | 2027-10-19 | 2027-11-04 | 12d | 31,208.85 | 31,208.85 |
| 574 | 8.3.2 | Fachada 02 - Lateral Direita |  | 12d | 2027-10-19 | 2027-11-04 | 569, 271 | 2027-10-19 | 2027-11-04 | 12d | 31,208.85 | 31,208.85 |
| 575 | 8.3.3 | Fachada 03 - Fundos |  | 12d | 2027-10-19 | 2027-11-04 | 570, 271 | 2027-10-19 | 2027-11-04 | 12d | 31,208.85 | 31,208.85 |
| 576 | 8.3.4 | Fachada 04 - Lateral Esquerda |  | 12d | 2027-10-19 | 2027-11-04 | 571, 271 | 2027-10-19 | 2027-11-04 | 12d | 31,208.85 | 31,208.85 |
| 577 | 8.4 | MARCO: Reboco externo e peitoris concluídos (libera esquadrias) | milestone | 0d | 2027-07-22 | 2027-07-22 | 568, 569, 570, 571 | 2027-07-22 | 2027-07-22 | 0d |  |  |
| 578 | 8.5 | MARCO: Fachadas concluídas | milestone | 0d | 2027-11-05 | 2027-11-05 | 573, 574, 575, 576 | 2027-11-05 | 2027-11-05 | 0d |  |  |
| 579 | 9 | **COBERTURA E RESERVATÓRIO** |  | 56d | 2027-07-08 | 2027-09-24 |  | 2027-07-08 | 2027-09-24 | 56d | 31,679.03 | 31,679.03 |
| 580 | 9.1 | Estrutura metálica do telhado |  | 22d | 2027-07-08 | 2027-08-06 | 138 | 2027-07-08 | 2027-08-06 | 22d | 12,671.61 | 12,671.61 |
| 581 | 9.2 | Telhamento (telhas metálicas) |  | 14d | 2027-08-09 | 2027-08-26 | 580 | 2027-08-09 | 2027-08-26 | 14d | 11,087.66 | 11,087.66 |
| 582 | 9.3 | Funilaria - calhas, rufos e algerozas |  | 20d | 2027-08-27 | 2027-09-24 | 581 | 2027-08-27 | 2027-09-24 | 20d | 7,919.76 | 7,919.76 |
| 583 | 9.4 | Impermeabilização de cobertura e reservatorio |  | 8d | 2027-07-08 | 2027-07-19 | 138 | 2027-07-08 | 2027-07-19 | 8d |  |  |
| 584 | 9.5 | Impermeabilização de sacadas e varandas |  | 10d | 2027-08-03 | 2027-08-16 | 227 | 2027-08-03 | 2027-08-16 | 10d |  |  |

Notes:
- 563: Balancim ancorado na laje de cobertura dos pavimentos-tipo. 2 unidade(s) operando em paralelo, em 2 onda(s) de execucao. Libera peitoril, esquadria e, na sequencia, o gesso interno de todos os pavimentos.
- 564: Balancim ancorado na laje de cobertura dos pavimentos-tipo. 2 unidade(s) operando em paralelo, em 2 onda(s) de execucao. Libera peitoril, esquadria e, na sequencia, o gesso interno de todos os pavimentos.
- 565: Balancim ancorado na laje de cobertura dos pavimentos-tipo. 2 unidade(s) operando em paralelo, em 2 onda(s) de execucao. Libera peitoril, esquadria e, na sequencia, o gesso interno de todos os pavimentos.
- 566: Balancim ancorado na laje de cobertura dos pavimentos-tipo. 2 unidade(s) operando em paralelo, em 2 onda(s) de execucao. Libera peitoril, esquadria e, na sequencia, o gesso interno de todos os pavimentos.

| ID | WBS | Task | Type | Duration | Start | Finish | Predecessors | Baseline start | Baseline finish | Baseline duration | Cost | Baseline cost |
| --- | --- | --- | --- | --- | --- | --- | --- | --- | --- | --- | --- | --- |
| 585 | 10 | **ÁREA COMUM - TÉRREO E LAZER** |  | 63d | 2026-11-19 | 2027-02-24 |  | 2026-11-19 | 2027-02-24 | 63d | 98,725.8 | 98,725.8 |
| 586 | 10.1 | Impermeabilização dos BWCs de areas comuns |  | 3d | 2026-11-19 | 2026-11-24 | 35 | 2026-11-19 | 2026-11-24 | 3d |  |  |
| 587 | 10.2 | Instalações hidraulicas e elétricas - areas comuns |  | 15d | 2026-11-25 | 2026-12-15 | 586 | 2026-11-25 | 2026-12-15 | 15d |  |  |
| 588 | 10.3 | Reboco, contrapiso e revestimentos - areas comuns |  | 20d | 2026-12-16 | 2027-01-18 | 587 | 2026-12-16 | 2027-01-18 | 20d |  |  |
| 589 | 10.4 | Forro, esquadrias e pintura - areas comuns |  | 18d | 2027-01-19 | 2027-02-15 | 588 | 2027-01-19 | 2027-02-15 | 18d |  |  |
| 590 | 10.5 | Louças, metais e bancadas - areas comuns |  | 6d | 2027-02-16 | 2027-02-23 | 589 | 2027-02-16 | 2027-02-23 | 6d |  |  |
| 591 | 10.6 | Churrasqueiras e lareiras (area comum + 4 aptos cobertura) |  | 25d | 2027-01-19 | 2027-02-24 | 588 | 2027-01-19 | 2027-02-24 | 25d | 98,725.8 | 98,725.8 |
| 592 | 11 | **ÁREA EXTERNA E URBANIZAÇÃO** |  | 158d | 2027-06-16 | 2028-01-31 |  | 2027-06-16 | 2028-01-31 | 158d | 292,044.98 | 292,044.98 |
| 593 | 11.1 | Fechamento perimetral (muro / gradil) |  | 30d | 2027-11-08 | 2027-12-20 | 578 | 2027-11-08 | 2027-12-20 | 30d | 60,000 | 60,000 |
| 594 | 11.2 | Portões social e de serviço |  | 8d | 2027-12-21 | 2028-01-03 | 593 | 2027-12-21 | 2028-01-03 | 8d |  |  |
| 595 | 11.3 | Pavimentação externa - blocos intertravados |  | 25d | 2027-11-23 | 2027-12-28 | 593SS+10d | 2027-11-23 | 2027-12-28 | 25d | 39,208.57 | 39,208.57 |
| 596 | 11.4 | Central de gás GLP e medidores |  | 15d | 2027-06-16 | 2027-07-06 | 427 | 2027-06-16 | 2027-07-06 | 15d | 52,836.41 | 52,836.41 |
| 597 | 11.5 | Paisagismo, mobiliário e decoração externa |  | 20d | 2028-01-04 | 2028-01-31 | 595, 594 | 2028-01-04 | 2028-01-31 | 20d | 140,000 | 140,000 |
| 598 | 12 | **SISTEMAS ESPECIAIS** |  | 404d | 2026-10-01 | 2028-05-19 |  | 2026-10-01 | 2028-05-19 | 404d | 687,450.07 | 687,450.07 |
| 599 | 12.1 | **Elevadores** |  | 222d | 2026-10-22 | 2027-09-14 |  | 2026-10-22 | 2027-09-14 | 222d | 222,400 | 222,400 |
| 600 | 12.1.1 | Elevador - aquisição (lead time 6 meses) |  | 130d | 2026-10-22 | 2027-05-05 | 37SS | 2026-10-22 | 2027-05-05 | 130d | 155,680 | 155,680 |
| 601 | 12.1.2 | MARCO: Entrega do elevador em obra | milestone | 0d | 2027-05-06 | 2027-05-06 | 600 | 2027-05-06 | 2027-05-06 | 0d |  |  |
| 602 | 12.1.3 | Elevador - instalacao |  | 40d | 2027-07-08 | 2027-09-01 | 601, 138 | 2027-07-08 | 2027-09-01 | 40d | 55,600 | 55,600 |
| 603 | 12.1.4 | Elevador - comissionamento e ensaios |  | 8d | 2027-09-02 | 2027-09-14 | 602 | 2027-09-02 | 2027-09-14 | 8d | 11,120 | 11,120 |
| 604 | 12.2 | **Prevenção e Combate a Incêndio** |  | 25d | 2028-04-12 | 2028-05-19 |  | 2028-04-12 | 2028-05-19 | 25d | 124,629.45 | 124,629.45 |
| 605 | 12.2.1 | Extintores, sinalização, detecção de fumaça e iluminação de emergência |  | 25d | 2028-04-12 | 2028-05-19 | 504 | 2028-04-12 | 2028-05-19 | 25d | 124,629.45 | 124,629.45 |
| 606 | 12.3 | **SPDA** |  | 111d | 2027-05-03 | 2027-10-06 |  | 2027-05-03 | 2027-10-06 | 111d | 13,503 | 13,503 |
| 607 | 12.3.1 | Aterramento SPDA |  | 5d | 2027-05-03 | 2027-05-07 | 117 | 2027-05-03 | 2027-05-07 | 5d | 4,050.9 | 4,050.9 |
| 608 | 12.3.2 | Prumada SPDA |  | 10d | 2027-05-10 | 2027-05-21 | 607 | 2027-05-10 | 2027-05-21 | 10d | 4,050.9 | 4,050.9 |
| 609 | 12.3.3 | Cobertura SPDA e para-raios |  | 8d | 2027-09-27 | 2027-10-06 | 608, 582 | 2027-09-27 | 2027-10-06 | 8d | 5,401.2 | 5,401.2 |

| ID | WBS | Task | Type | Duration | Start | Finish | Predecessors | Baseline start | Baseline finish | Baseline duration | Cost | Baseline cost |
| --- | --- | --- | --- | --- | --- | --- | --- | --- | --- | --- | --- | --- |
| 610 | 12.4 | **Movimentação Vertical de Obra** |  | 368d | 2026-10-01 | 2028-03-27 |  | 2026-10-01 | 2028-03-27 | 368d | 326,917.62 | 326,917.62 |
| 611 | 12.4.1 | Mini grua - montagem |  | 3d | 2026-10-01 | 2026-10-05 | 28SS | 2026-10-01 | 2026-10-05 | 3d | 4,000 | 4,000 |
| 612 | 12.4.2 | Mini grua - operação e manutenção |  | 185d | 2026-10-06 | 2027-07-07 | 611 | 2026-10-06 | 2027-07-07 | 185d | 40,000 | 40,000 |
| 613 | 12.4.3 | Mini grua - desmontagem |  | 3d | 2027-07-08 | 2027-07-12 | 612 | 2027-07-08 | 2027-07-12 | 3d | 4,000 | 4,000 |
| 614 | 12.4.4 | Cremalheira - bloco de fixação |  | 3d | 2026-12-03 | 2026-12-07 | 52 | 2026-12-03 | 2026-12-07 | 3d | 14,000 | 14,000 |
| 615 | 12.4.5 | Cremalheira - montagem |  | 5d | 2026-12-08 | 2026-12-14 | 614 | 2026-12-08 | 2026-12-14 | 5d | 9,000 | 9,000 |
| 616 | 12.4.6 | MARCO: Cremalheira em operação | milestone | 0d | 2026-12-15 | 2026-12-15 | 615 | 2026-12-15 | 2026-12-15 | 0d |  |  |
| 617 | 12.4.7 | Cremalheira - operação, ascensões e manutenção |  | 312d | 2026-12-16 | 2028-03-20 | 616 | 2026-12-16 | 2028-03-20 | 312d | 246,360.12 | 246,360.12 |
| 618 | 12.4.8 | Cremalheira - desmontagem |  | 5d | 2028-03-21 | 2028-03-27 | 617 | 2028-03-21 | 2028-03-27 | 5d | 9,557.5 | 9,557.5 |
| 619 | 13 | MARCO: CONCLUSÃO FÍSICA DA OBRA | milestone | 0d | 2028-05-22 | 2028-05-22 | 393, 578, 597, 582, 605 | 2028-05-22 | 2028-05-22 | 0d |  |  |
| 620 | 14 | **ENTREGA, COMISSIONAMENTO E DESMOBILIZAÇÃO** |  | 235d | 2027-09-15 | 2028-08-23 |  | 2027-09-15 | 2028-08-23 | 235d | 48,758.5 | 48,758.5 |
| 621 | 14.1 | Limpeza grossa pós-obra |  | 20d | 2028-03-21 | 2028-04-18 | 393, 578 | 2028-03-21 | 2028-04-18 | 20d | 17,065.47 | 17,065.47 |
| 622 | 14.2 | Ligações definitivas - água, energia e gas |  | 20d | 2027-09-15 | 2027-10-13 | 596, 603 | 2027-09-15 | 2027-10-13 | 20d |  |  |
| 623 | 14.3 | Comissionamento e testes dos sistemas prediais |  | 15d | 2028-05-22 | 2028-06-09 | 622, 605, 609 | 2028-05-22 | 2028-06-09 | 15d |  |  |
| 624 | 14.4 | Limpeza fina de entrega |  | 20d | 2028-04-19 | 2028-05-18 | 621 | 2028-04-19 | 2028-05-18 | 20d | 19,503.4 | 19,503.4 |
| 625 | 14.5 | Vistoria final e solicitação do Habite-se |  | 30d | 2028-06-12 | 2028-07-24 | 623, 624, 597 | 2028-06-12 | 2028-07-24 | 30d |  |  |
| 626 | 14.6 | MARCO: Habite-se emitido | milestone | 0d | 2028-07-25 | 2028-07-25 | 625 | 2028-07-25 | 2028-07-25 | 0d |  |  |
| 627 | 14.7 | Averbação da construção e as-built |  | 20d | 2028-07-26 | 2028-08-22 | 626 | 2028-07-26 | 2028-08-22 | 20d |  |  |
| 628 | 14.8 | Desmobilização do canteiro |  | 15d | 2028-05-19 | 2028-06-08 | 624 | 2028-05-19 | 2028-06-08 | 15d | 12,189.62 | 12,189.62 |
| 629 | 14.9 | Buffer de contingência de gerenciamento |  | 20d | 2028-07-26 | 2028-08-22 | 626, 628 | 2028-07-26 | 2028-08-22 | 20d |  |  |
| 630 | 14.10 | MARCO: ENTREGA AO CLIENTE | milestone | 0d | 2028-08-23 | 2028-08-23 | 629, 627 | 2028-08-23 | 2028-08-23 | 0d |  |  |
| 631 | 15 | **RISCOS E CONTINGÊNCIAS** |  | 471d | 2026-10-01 | 2028-08-23 |  | 2026-10-01 | 2028-08-23 | 471d | 35,000 | 35,000 |
| 632 | 15.1 | Gastos com vizinhos, danos de obra e contencao de riscos |  | 471d | 2026-10-01 | 2028-08-23 | 28SS | 2026-10-01 | 2028-08-23 | 471d | 35,000 | 35,000 |

Notes:
- 612: Nível de esforço. Orçado: aluguel 10 meses + manutenção 10 meses (item 30302).
- 614: Entrada da cremalheira condicionada à conclusão da 3ª laje (Térreo, Pav. 01 e Pav. 02).
- 617: Nível de esforço. Orçado: aluguel 14 meses, manutenção 14 meses, operador 18 meses, ascensão 8,23 m (item 30301).
- 619: Teto contratual: 30/06/2028
- 629: Folga de gerenciamento reservada. Nao deve ser consumida sem deliberação do Comitê.
- 630: Teto contratual: 31/12/2028
